# D:\Developpements\DiamantExtreme\Document\Planification\Dx

How a schedule from MS Project changed from version to version. A marks actual dates.

## Version 1 (saved 2003-05-30)

| ID | WBS | Task | Duration | Start | Finish | Predecessors | Complete | Total float | Constraint |
| --- | --- | --- | --- | --- | --- | --- | --- | --- | --- |
| 1 |  | Début | 0d | 2003-05-12 | 2003-05-12 |  |  | 90.5d | start no earlier than 2003-05-12 |
| 2 | 2 | **Livrable 1 Vérification de données** | 9d | 2003-05-12 A | 2003-05-22 | 1 | 99% | 81.5d |  |
| 3 |  | Definir fichiers à importer | 2d | 2003-05-12 A | 2003-05-13 A |  | 100% |  |  |
| 4 |  | Importer données | 2d | 2003-05-14 A | 2003-05-15 A | 3 | 100% |  |  |
| 5 |  | Vérification fichier | 5d | 2003-05-16 A | 2003-05-22 A | 4 | 100% |  | start no earlier than 2003-05-22 |
| 6 |  | Fin Livrable 1 | 0d | 2003-05-22 | 2003-05-22 | 5 |  | 81.5d | start no earlier than 2003-05-04 |
| 7 | 3 | **Librable 2 Menu Fichier** | 17.5d? | 2003-05-23 | 2003-06-17 | 5 |  | 55.5d |  |
| 8 |  | Menu Nouveau Exam | 2d? | 2003-05-23 | 2003-05-26 |  |  | 79.5d |  |
| 9 |  | Menu Nouveau Cycle | 2d? | 2003-05-27 | 2003-05-28 |  |  | 77.5d |  |
| 10 |  | Grille Horaire TTPanel | 2d? | 2003-05-29 | 2003-05-30 |  |  | 75.5d |  |
| 11 |  | Menu Open | 2d? | 2003-06-02 | 2003-06-03 |  |  | 69.5d |  |
| 12 |  | Actions Open | 2d? | 2003-06-04 | 2003-06-05 | 11 |  | 69.5d |  |
| 13 |  | Menu Fermer + Close Win | 2d? | 2003-06-06 | 2003-06-09 | 12 |  | 69.5d |  |
| 14 |  | Menu sauvegarde | 2d? | 2003-05-23 | 2003-05-26 |  |  | 75.5d |  |
| 15 |  | Menu sauvegarde sous | 2d? | 2003-05-27 | 2003-05-28 | 14 |  | 75.5d |  |
| 16 |  | Action sauvegarde | 2d? | 2003-05-29 | 2003-05-30 | 15 |  | 75.5d |  |
| 17 |  | Lire/Écrire XML | 5d? | 2003-05-23 | 2003-05-29 |  |  | 71.5d |  |
| 18 |  | Lire/Écrire Grille horaire | 3d | 2003-05-30 | 2003-06-03 | 17 |  | 71.5d |  |
| 19 |  | Construction TTStructure | 2d? | 2003-06-04 | 2003-06-05 | 18 |  | 71.5d |  |
| 20 |  | Menu Nouvelle grille horaire | 2d | 2003-06-10 | 2003-06-11 |  |  | 67.5d |  |
| 21 |  | Actions Nouvelle grille | 4d | 2003-06-06 | 2003-06-11 |  |  | 45.5d | start no earlier than 2003-06-03 |
| 22 |  | Menu Modifier grille horaire | 2d | 2003-06-12 | 2003-06-13 |  |  | 42d |  |
| 23 |  | Save grille horaire | 1.5d | 2003-06-16 | 2003-06-17 | 22 |  | 42d |  |
| 24 |  | Tool bar modif grille | 5d? | 2003-06-02 | 2003-06-06 |  |  | 65.5d |  |
| 25 |  | Actions Toolbar | 5d? | 2003-06-09 | 2003-06-13 | 24 |  | 65.5d |  |
| 26 |  | Fin Livrable 2 | 0d | 2003-06-17 | 2003-06-17 | 23, 21 |  | 42d | start no earlier than 2003-06-16 |
| 27 | 4 | **Livrable 3 Changements en mémoire** | 28d | 2003-06-17 | 2003-07-25 | 26 |  | 36d |  |
| 28 | 4.1 | **Affectation initiale 1** | 20d | 2003-06-17 | 2003-07-15 |  |  | 44d |  |
| 29 |  | Codage | 10d | 2003-06-17 | 2003-07-01 |  |  | 54d |  |
| 30 |  | Test | 10d | 2003-07-01 | 2003-07-15 |  |  | 44d |  |
| 31 |  | Menu activités | 2d | 2003-06-17 | 2003-06-19 |  |  | 60d |  |
| 32 | 4.3 | **Actions Activités** | 4d | 2003-06-19 | 2003-06-25 | 31 |  | 58d |  |
| 33 |  | Codage | 2d | 2003-06-19 | 2003-06-23 |  |  | 60d |  |
| 34 |  | Test | 2d | 2003-06-23 | 2003-06-25 |  |  | 58d |  |
| 35 |  | Menu blocs | 2d | 2003-06-25 | 2003-06-27 |  |  | 54d |  |
| 36 | 4.5 | **Actions blocs** | 4d | 2003-06-27 | 2003-07-03 | 35 |  | 52d |  |
| 37 |  | Codage | 2d | 2003-06-27 | 2003-07-01 |  |  | 54d |  |
| 38 |  | Test | 2d | 2003-07-01 | 2003-07-03 |  |  | 52d |  |
| 39 |  | Menu enseignants | 2d | 2003-07-03 | 2003-07-07 |  |  | 48d |  |
| 40 | 4.7 | **Actions enseignants** | 4d | 2003-07-07 | 2003-07-11 | 39 |  | 46d |  |
| 41 |  | Codage | 2d | 2003-07-07 | 2003-07-09 |  |  | 48d |  |
| 42 |  | Test | 2d | 2003-07-09 | 2003-07-11 |  |  | 46d |  |
| 43 |  | Menu groupe | 2d | 2003-07-11 | 2003-07-15 |  |  | 42d |  |
| 44 | 4.9 | **Actions groupes** | 4d | 2003-07-15 | 2003-07-21 | 43 |  | 40d |  |
| 45 |  | Codage | 2d | 2003-07-15 | 2003-07-17 |  |  | 42d |  |
| 46 |  | Test | 2d | 2003-07-17 | 2003-07-21 |  |  | 40d |  |
| 47 | 4.10 | **Grille horaire Adaptée** | 4d | 2003-07-21 | 2003-07-25 |  |  | 18d |  |
| 48 |  | Codage | 2d | 2003-07-21 | 2003-07-23 |  |  | 18d |  |
| 49 |  | Test | 2d | 2003-07-23 | 2003-07-25 | 48 |  | 18d |  |
| 50 |  | Fin Livrable 3 | 0d | 2003-07-25 | 2003-07-25 | 49 |  | 18d |  |
| 51 | 5 | **Livrable 4 Construction Horaire** | 18d? | 2003-07-25 | 2003-08-20 | 50 |  | 18d |  |
| 52 | 5.1 | **Affectation initiale 2** | 6d? | 2003-07-25 | 2003-08-04 |  |  | 28d |  |
| 53 |  | Codage actions Affectation | 2d? | 2003-07-25 | 2003-07-29 |  |  | 34d |  |
| 54 |  | Test | 2d? | 2003-07-29 | 2003-07-31 |  |  | 32d |  |
| 55 |  | Calcul de conflits | 2d? | 2003-07-31 | 2003-08-04 |  |  | 24d |  |
| 56 | 5.2 | **Conflits enseignants** | 4d? | 2003-08-04 | 2003-08-08 | 55 |  | 24d |  |
| 57 |  | Actions associées conflits enseigents | 2d? | 2003-08-04 | 2003-08-06 |  |  | 24d |  |
| 58 |  | Test | 2d? | 2003-08-06 | 2003-08-08 | 57 |  | 24d |  |
| 59 | 5.3 | **Conflits étudiants** | 4d? | 2003-08-08 | 2003-08-14 |  |  | 22d |  |
| 60 |  | Actions associées conflits étudiants | 2d? | 2003-08-08 | 2003-08-12 |  |  | 24d |  |
| 61 |  | Test | 2d? | 2003-08-12 | 2003-08-14 |  |  | 22d |  |
| 62 | 5.4 | **Conflits locaux** | 4d? | 2003-08-14 | 2003-08-20 |  |  | 18d |  |
| 63 |  | Actions associées conflits locaux | 2d? | 2003-08-14 | 2003-08-18 |  |  | 20d |  |
| 64 |  | Test | 2d? | 2003-08-18 | 2003-08-20 |  |  | 18d |  |
| 65 | 5.5 | **Actions associées conflits et interface** | 4d? | 2003-08-08 | 2003-08-14 | 58 |  | 22d |  |
| 66 |  | Codage | 2d? | 2003-08-08 | 2003-08-12 |  |  | 24d |  |
| 67 |  | Test | 2d? | 2003-08-12 | 2003-08-14 |  |  | 22d |  |
| 68 |  | Dialoges amélioration manuelle | 2d? | 2003-07-25 | 2003-07-29 |  |  | 34d |  |
| 69 | 5.7 | **Actions amélioration manuelle** | 4d? | 2003-07-29 | 2003-08-04 |  |  | 30d |  |
| 70 |  | Codage | 2d? | 2003-07-29 | 2003-07-31 |  |  | 32d |  |

| ID | WBS | Task | Duration | Start | Finish | Predecessors | Total float |
| --- | --- | --- | --- | --- | --- | --- | --- |
| 71 |  | Test | 2d? | 2003-07-31 | 2003-08-04 |  | 30d |
| 72 |  | Exporter données | 2d? | 2003-08-04 | 2003-08-06 |  | 28d |
| 73 | 5.9 | **Actions exporter données** | 8d? | 2003-08-06 | 2003-08-18 |  | 10d |
| 74 |  | Codage | 2d? | 2003-08-06 | 2003-08-08 |  | 26d |
| 75 |  | Test | 2d? | 2003-08-14 | 2003-08-18 |  | 4d |
| 76 |  | Fin Livrable 4 | 0d | 2003-08-18 | 2003-08-18 | 75 | 4d |
| 77 | 6 | **Livrable 5 Optimisation + Rapports** | 14d? | 2003-08-18 | 2003-09-05 | 76 | 4d |
| 78 |  | Optimisation | 2d? | 2003-08-20 | 2003-08-22 |  | 10.5d |
| 79 |  | Codage | 2d? | 2003-08-22 | 2003-08-26 | 78 | 14d |
| 80 |  | Test | 2d? | 2003-08-26 | 2003-08-28 | 78 | 12d |
| 81 |  | Dialog de rapports | 2d? | 2003-08-18 | 2003-08-20 |  | 4d |
| 82 |  | Rapport complet | 2d? | 2003-08-20 | 2003-08-22 | 81 | 4d |
| 83 |  | Rapport conflits | 2d? | 2003-08-22 | 2003-08-26 | 82 | 4d |
| 84 |  | Rapport importation | 2d? | 2003-08-26 | 2003-08-28 | 83 | 4d |
| 85 |  | Rapport liste d'activités | 2d? | 2003-08-28 | 2003-09-01 | 84 | 4d |
| 86 |  | Rapport groupes | 2d? | 2003-09-01 | 2003-09-03 | 85 | 4d |
| 87 |  | Rapport complet & ranger | 2d? | 2003-09-03 | 2003-09-05 | 86 | 4d |
| 88 |  | Fin Livrable 5 | 0d | 2003-09-05 | 2003-09-05 | 87 | 4d |
| 89 | 7 | **Livrable 6 Maintenance** | 6d? | 2003-09-05 | 2003-09-15 | 88 | 0d |
| 90 |  | Compéter les menus | 2d? | 2003-09-05 | 2003-09-09 |  | 4d |
| 91 |  | Compléter lesrapports | 2d? | 2003-09-09 | 2003-09-11 |  | 2d |
| 92 |  | Ajout des fonctionnalitées | 2d? | 2003-09-11 | 2003-09-15 |  | 0d |

## Version 2 (saved 2003-05-30)

Last finish 2003-09-15 → 2003-09-11 (-4d). Complete tasks 3 → 4.

Changed:

| ID | Task | Start | Finish | Duration | Complete | Total float | Other |
| --- | --- | --- | --- | --- | --- | --- | --- |
| 7 | **Librable 2 Menu Fichier** | 2003-05-23 A | 2003-06-17 → 2003-06-13 (-4d) | 17.5d? → 16d? | 0% → 15% | 55.5d → 64d |  |
| 8 | Menu Nouveau Exam | 2003-05-23 A | 2003-05-26 → 2003-05-23 (-3d) | 2d? → 1d? | 0% → 60% | 79.5d → 79d |  |
| 9 | Menu Nouveau Cycle | 2003-05-27 → 2003-05-26 (-1d) | 2003-05-28 → 2003-05-26 (-2d) | 2d? → 1d |  | 77.5d → 78d |  |
| 10 | Grille Horaire TTPanel | 2003-05-29 A |  |  | 0% → 60% | 75.5d → 74d |  |
| 11 | Menu Open | 2003-06-02 → 2003-05-27 (-6d) | 2003-06-03 → 2003-05-28 (-6d) |  |  | 69.5d → 70d |  |
| 12 | Actions Open | 2003-06-04 → 2003-06-02 (-2d) | 2003-06-05 → 2003-06-03 (-2d) |  |  | 69.5d → 70d |  |
| 13 | Menu Fermer + Close Win | 2003-06-06 → 2003-06-04 (-2d) | 2003-06-09 → 2003-06-05 (-4d) |  |  | 69.5d → 70d |  |
| 17 | Lire/Écrire XML | 2003-05-23 A | 2003-05-29 A |  | 0% → 100% | 71.5d → none |  |
| 20 | Menu Nouvelle grille horaire | 2003-06-10 → 2003-06-06 (-4d) | 2003-06-11 → 2003-06-09 (-2d) |  |  | 67.5d → 68d |  |
| 21 | Actions Nouvelle grille |  |  |  |  | 45.5d → 44d | constraint start no earlier than 2003-06-03 → none |
| 22 | Menu Modifier grille horaire | 2003-06-12 → 2003-06-10 (-2d) | 2003-06-13 → 2003-06-11 (-2d) |  |  |  |  |
| 23 | Save grille horaire | 2003-06-16 → 2003-06-12 (-4d) | 2003-06-17 → 2003-06-13 (-4d) | 1.5d → 2d |  |  |  |
| 26 | Fin Livrable 2 | 2003-06-17 → 2003-06-13 (-4d) | 2003-06-17 → 2003-06-13 (-4d) |  |  |  | constraint start no earlier than 2003-06-16 → none |
| 27 | **Livrable 3 Changements en mémoire** | 2003-06-17 → 2003-06-16 (-1d) | 2003-07-25 → 2003-07-23 (-2d) |  |  |  |  |
| 28 | **Affectation initiale 1** | 2003-06-17 → 2003-06-16 (-1d) | 2003-07-15 → 2003-07-11 (-4d) |  |  |  |  |
| 29 | Codage | 2003-06-17 → 2003-06-16 (-1d) | 2003-07-01 → 2003-06-27 (-4d) |  |  |  |  |
| 30 | Test | 2003-07-01 → 2003-06-30 (-1d) | 2003-07-15 → 2003-07-11 (-4d) |  |  |  |  |
| 31 | Menu activités | 2003-06-17 → 2003-06-16 (-1d) | 2003-06-19 → 2003-06-17 (-2d) |  |  |  |  |
| 32 | **Actions Activités** | 2003-06-19 → 2003-06-18 (-1d) | 2003-06-25 → 2003-06-23 (-2d) |  |  |  |  |
| 33 | Codage | 2003-06-19 → 2003-06-18 (-1d) | 2003-06-23 → 2003-06-19 (-4d) |  |  |  |  |
| 34 | Test | 2003-06-23 → 2003-06-20 (-3d) | 2003-06-25 → 2003-06-23 (-2d) |  |  |  |  |
| 35 | Menu blocs | 2003-06-25 → 2003-06-24 (-1d) | 2003-06-27 → 2003-06-25 (-2d) |  |  |  |  |
| 36 | **Actions blocs** | 2003-06-27 → 2003-06-26 (-1d) | 2003-07-03 → 2003-07-01 (-2d) |  |  |  |  |
| 37 | Codage | 2003-06-27 → 2003-06-26 (-1d) | 2003-07-01 → 2003-06-27 (-4d) |  |  |  |  |
| 38 | Test | 2003-07-01 → 2003-06-30 (-1d) | 2003-07-03 → 2003-07-01 (-2d) |  |  |  |  |
| 39 | Menu enseignants | 2003-07-03 → 2003-07-02 (-1d) | 2003-07-07 → 2003-07-03 (-4d) |  |  |  |  |
| 40 | **Actions enseignants** | 2003-07-07 → 2003-07-04 (-3d) | 2003-07-11 → 2003-07-09 (-2d) |  |  |  |  |
| 41 | Codage | 2003-07-07 → 2003-07-04 (-3d) | 2003-07-09 → 2003-07-07 (-2d) |  |  |  |  |
| 42 | Test | 2003-07-09 → 2003-07-08 (-1d) | 2003-07-11 → 2003-07-09 (-2d) |  |  |  |  |
| 43 | Menu groupe | 2003-07-11 → 2003-07-10 (-1d) | 2003-07-15 → 2003-07-11 (-4d) |  |  |  |  |
| 44 | **Actions groupes** | 2003-07-15 → 2003-07-14 (-1d) | 2003-07-21 → 2003-07-17 (-4d) |  |  |  |  |
| 45 | Codage | 2003-07-15 → 2003-07-14 (-1d) | 2003-07-17 → 2003-07-15 (-2d) |  |  |  |  |
| 46 | Test | 2003-07-17 → 2003-07-16 (-1d) | 2003-07-21 → 2003-07-17 (-4d) |  |  |  |  |
| 47 | **Grille horaire Adaptée** | 2003-07-21 → 2003-07-18 (-3d) | 2003-07-25 → 2003-07-23 (-2d) |  |  |  |  |
| 48 | Codage | 2003-07-21 → 2003-07-18 (-3d) | 2003-07-23 → 2003-07-21 (-2d) |  |  |  |  |
| 49 | Test | 2003-07-23 → 2003-07-22 (-1d) | 2003-07-25 → 2003-07-23 (-2d) |  |  |  |  |
| 50 | Fin Livrable 3 | 2003-07-25 → 2003-07-23 (-2d) | 2003-07-25 → 2003-07-23 (-2d) |  |  |  |  |
| 51 | **Livrable 4 Construction Horaire** | 2003-07-25 → 2003-07-24 (-1d) | 2003-08-20 → 2003-08-18 (-2d) |  |  |  |  |
| 52 | **Affectation initiale 2** | 2003-07-25 → 2003-07-24 (-1d) | 2003-08-04 → 2003-07-31 (-4d) |  |  |  |  |
| 53 | Codage actions Affectation | 2003-07-25 → 2003-07-24 (-1d) | 2003-07-29 → 2003-07-25 (-4d) |  |  |  |  |
| 54 | Test | 2003-07-29 → 2003-07-28 (-1d) | 2003-07-31 → 2003-07-29 (-2d) |  |  |  |  |
| 55 | Calcul de conflits | 2003-07-31 → 2003-07-30 (-1d) | 2003-08-04 → 2003-07-31 (-4d) |  |  |  |  |
| 56 | **Conflits enseignants** | 2003-08-04 → 2003-08-01 (-3d) | 2003-08-08 → 2003-08-06 (-2d) |  |  |  |  |
| 57 | Actions associées conflits enseigents | 2003-08-04 → 2003-08-01 (-3d) | 2003-08-06 → 2003-08-04 (-2d) |  |  |  |  |
| 58 | Test | 2003-08-06 → 2003-08-05 (-1d) | 2003-08-08 → 2003-08-06 (-2d) |  |  |  |  |
| 59 | **Conflits étudiants** | 2003-08-08 → 2003-08-07 (-1d) | 2003-08-14 → 2003-08-12 (-2d) |  |  |  |  |
| 60 | Actions associées conflits étudiants | 2003-08-08 → 2003-08-07 (-1d) | 2003-08-12 → 2003-08-08 (-4d) |  |  |  |  |
| 61 | Test | 2003-08-12 → 2003-08-11 (-1d) | 2003-08-14 → 2003-08-12 (-2d) |  |  |  |  |
| 62 | **Conflits locaux** | 2003-08-14 → 2003-08-13 (-1d) | 2003-08-20 → 2003-08-18 (-2d) |  |  |  |  |
| 63 | Actions associées conflits locaux | 2003-08-14 → 2003-08-13 (-1d) | 2003-08-18 → 2003-08-14 (-4d) |  |  |  |  |
| 64 | Test | 2003-08-18 → 2003-08-15 (-3d) | 2003-08-20 → 2003-08-18 (-2d) |  |  |  |  |
| 65 | **Actions associées conflits et interface** | 2003-08-08 → 2003-08-07 (-1d) | 2003-08-14 → 2003-08-12 (-2d) |  |  |  |  |
| 66 | Codage | 2003-08-08 → 2003-08-07 (-1d) | 2003-08-12 → 2003-08-08 (-4d) |  |  |  |  |
| 67 | Test | 2003-08-12 → 2003-08-11 (-1d) | 2003-08-14 → 2003-08-12 (-2d) |  |  |  |  |
| 68 | Dialoges amélioration manuelle | 2003-07-25 → 2003-07-24 (-1d) | 2003-07-29 → 2003-07-25 (-4d) |  |  |  |  |
| 69 | **Actions amélioration manuelle** | 2003-07-29 → 2003-07-28 (-1d) | 2003-08-04 → 2003-07-31 (-4d) |  |  |  |  |
| 70 | Codage | 2003-07-29 → 2003-07-28 (-1d) | 2003-07-31 → 2003-07-29 (-2d) |  |  |  |  |
| 71 | Test | 2003-07-31 → 2003-07-30 (-1d) | 2003-08-04 → 2003-07-31 (-4d) |  |  |  |  |
| 72 | Exporter données | 2003-08-04 → 2003-08-01 (-3d) | 2003-08-06 → 2003-08-04 (-2d) |  |  |  |  |
| 73 | **Actions exporter données** | 2003-08-06 → 2003-08-05 (-1d) | 2003-08-18 → 2003-08-14 (-4d) |  |  |  |  |
| 74 | Codage | 2003-08-06 → 2003-08-05 (-1d) | 2003-08-08 → 2003-08-06 (-2d) |  |  |  |  |
| 75 | Test | 2003-08-14 → 2003-08-13 (-1d) | 2003-08-18 → 2003-08-14 (-4d) |  |  |  |  |
| 76 | Fin Livrable 4 | 2003-08-18 → 2003-08-14 (-4d) | 2003-08-18 → 2003-08-14 (-4d) |  |  |  |  |
| 77 | **Livrable 5 Optimisation + Rapports** | 2003-08-18 → 2003-08-15 (-3d) | 2003-09-05 → 2003-09-03 (-2d) |  |  |  |  |
| 78 | Optimisation | 2003-08-20 → 2003-08-19 (-1d) | 2003-08-22 → 2003-08-20 (-2d) |  |  | 10.5d → 12d |  |
| 79 | Codage | 2003-08-22 → 2003-08-21 (-1d) | 2003-08-26 → 2003-08-22 (-4d) |  |  |  |  |
| 80 | Test | 2003-08-26 → 2003-08-25 (-1d) | 2003-08-28 → 2003-08-26 (-2d) |  |  |  |  |
| 81 | Dialog de rapports | 2003-08-18 → 2003-08-15 (-3d) | 2003-08-20 → 2003-08-18 (-2d) |  |  |  |  |
| 82 | Rapport complet | 2003-08-20 → 2003-08-19 (-1d) | 2003-08-22 → 2003-08-20 (-2d) |  |  |  |  |
| 83 | Rapport conflits | 2003-08-22 → 2003-08-21 (-1d) | 2003-08-26 → 2003-08-22 (-4d) |  |  |  |  |

| ID | Task | Start | Finish |
| --- | --- | --- | --- |
| 84 | Rapport importation | 2003-08-26 → 2003-08-25 (-1d) | 2003-08-28 → 2003-08-26 (-2d) |
| 85 | Rapport liste d'activités | 2003-08-28 → 2003-08-27 (-1d) | 2003-09-01 → 2003-08-28 (-4d) |
| 86 | Rapport groupes | 2003-09-01 → 2003-08-29 (-3d) | 2003-09-03 → 2003-09-01 (-2d) |
| 87 | Rapport complet & ranger | 2003-09-03 → 2003-09-02 (-1d) | 2003-09-05 → 2003-09-03 (-2d) |
| 88 | Fin Livrable 5 | 2003-09-05 → 2003-09-03 (-2d) | 2003-09-05 → 2003-09-03 (-2d) |
| 89 | **Livrable 6 Maintenance** | 2003-09-05 → 2003-09-04 (-1d) | 2003-09-15 → 2003-09-11 (-4d) |
| 90 | Compéter les menus | 2003-09-05 → 2003-09-04 (-1d) | 2003-09-09 → 2003-09-05 (-4d) |
| 91 | Compléter lesrapports | 2003-09-09 → 2003-09-08 (-1d) | 2003-09-11 → 2003-09-09 (-2d) |
| 92 | Ajout des fonctionnalitées | 2003-09-11 → 2003-09-10 (-1d) | 2003-09-15 → 2003-09-11 (-4d) |

## Version 3 (saved 2003-06-02)

Last finish stays 2003-09-11. Complete tasks 4 → 7.

Changed:

| ID | Task | Start | Finish | Duration | Complete | Total float | Other |
| --- | --- | --- | --- | --- | --- | --- | --- |
| 6 | Fin Livrable 1 |  |  |  |  |  | constraint start no earlier than 2003-05-04 → none |
| 7 | **Librable 2 Menu Fichier** |  |  |  | 15% → 20% |  |  |
| 8 | Menu Nouveau Exam |  | 2003-05-23 A |  | 60% → 100% | 79d → none |  |
| 9 | Menu Nouveau Cycle | 2003-05-26 A | 2003-05-26 A |  | 0% → 100% | 78d → none |  |
| 11 | Menu Open | 2003-05-27 A | 2003-05-28 → 2003-05-27 A (-1d) | 2d? → 1d | 0% → 100% | 70d → none |  |
| 27 | **Livrable 3 Changements en mémoire** |  |  | 28d → 28d? |  |  |  |
| 28 | **Affectation initiale 1** |  |  | 20d → 20d? |  |  |  |
| 29 | Codage |  |  | 10d → 10d? |  |  |  |
| 30 | Test |  |  | 10d → 10d? |  |  |  |

## Version 4 (saved 2003-06-04)

Last finish stays 2003-09-11. Complete tasks 7 → 8.

Changed:

| ID | Task | Start | Finish | Duration | Complete | Total float |
| --- | --- | --- | --- | --- | --- | --- |
| 7 | **Librable 2 Menu Fichier** |  |  |  | 20% → 23% |  |
| 15 | Menu sauvegarde sous | 2003-05-27 A | 2003-05-28 → 2003-05-27 A (-1d) | 2d? → 1d | 0% → 100% | 74d → none |
| 16 | Action sauvegarde | 2003-05-29 → 2003-05-28 (-1d) | 2003-05-30 → 2003-05-29 (-1d) |  |  | 74d → 75d |

## Version 5 (saved 2003-06-09)

Last finish 2003-09-11 → 2003-09-10 (-1d). Complete tasks 8 → 12.

Changed:

| ID | Task | Start | Finish | Duration | Complete | Total float | Predecessors |
| --- | --- | --- | --- | --- | --- | --- | --- |
| 7 | **Librable 2 Menu Fichier** |  | 2003-06-13 → 2003-06-12 (-1d) | 16d? → 15d? | 23% → 36% |  |  |
| 12 | Actions Open | 2003-06-02 A | 2003-06-03 → 2003-06-02 A (-1d) | 2d? → 1d | 0% → 100% | 72d → none |  |
| 13 | Menu Fermer + Close Win | 2003-06-04 A | 2003-06-05 → 2003-06-04 A (-1d) | 2d? → 1d | 0% → 100% | 70d → none |  |
| 14 | Menu sauvegarde | 2003-05-23 A | 2003-05-26 → 2003-05-23 A (-3d) | 2d? → 1d | 0% → 100% | 74d → none |  |
| 16 | Action sauvegarde | 2003-05-28 A | 2003-05-29 → 2003-05-28 A (-1d) | 2d? → 1d? | 0% → 100% | 75d → none |  |
| 20 | Menu Nouvelle grille horaire | 2003-06-06 → 2003-06-05 (-1d) | 2003-06-09 → 2003-06-06 (-3d) |  |  |  |  |
| 22 | Menu Modifier grille horaire | 2003-06-10 → 2003-06-09 (-1d) | 2003-06-11 → 2003-06-10 (-1d) |  |  |  |  |
| 23 | Save grille horaire | 2003-06-12 → 2003-06-11 (-1d) | 2003-06-13 → 2003-06-12 (-1d) |  |  |  |  |
| 24 | Tool bar modif grille | 2003-06-02 → 2003-05-29 (-4d) | 2003-06-06 → 2003-06-04 (-2d) |  |  | 64d → 48d |  |
| 25 | Actions Toolbar | 2003-06-09 → 2003-06-05 (-4d) | 2003-06-13 → 2003-06-11 (-2d) |  |  | 64d → 65d |  |
| 26 | Fin Livrable 2 | 2003-06-13 → 2003-06-12 (-1d) | 2003-06-13 → 2003-06-12 (-1d) |  |  |  | 23, 21 → 23, 21, 25 |
| 27 | **Livrable 3 Changements en mémoire** | 2003-06-16 → 2003-06-13 (-3d) | 2003-07-23 → 2003-07-22 (-1d) |  |  |  |  |
| 28 | **Affectation initiale 1** | 2003-06-16 → 2003-06-13 (-3d) | 2003-07-11 → 2003-07-10 (-1d) |  |  |  |  |
| 29 | Codage | 2003-06-16 → 2003-06-13 (-3d) | 2003-06-27 → 2003-06-26 (-1d) |  |  |  |  |
| 30 | Test | 2003-06-30 → 2003-06-27 (-3d) | 2003-07-11 → 2003-07-10 (-1d) |  |  |  |  |
| 31 | Menu activités | 2003-06-16 → 2003-06-13 (-3d) | 2003-06-17 → 2003-06-16 (-1d) |  |  |  |  |
| 32 | **Actions Activités** | 2003-06-18 → 2003-06-17 (-1d) | 2003-06-23 → 2003-06-20 (-3d) |  |  |  |  |
| 33 | Codage | 2003-06-18 → 2003-06-17 (-1d) | 2003-06-19 → 2003-06-18 (-1d) |  |  |  |  |
| 34 | Test | 2003-06-20 → 2003-06-19 (-1d) | 2003-06-23 → 2003-06-20 (-3d) |  |  |  |  |
| 35 | Menu blocs | 2003-06-24 → 2003-06-23 (-1d) | 2003-06-25 → 2003-06-24 (-1d) |  |  |  |  |
| 36 | **Actions blocs** | 2003-06-26 → 2003-06-25 (-1d) | 2003-07-01 → 2003-06-30 (-1d) |  |  |  |  |
| 37 | Codage | 2003-06-26 → 2003-06-25 (-1d) | 2003-06-27 → 2003-06-26 (-1d) |  |  |  |  |
| 38 | Test | 2003-06-30 → 2003-06-27 (-3d) | 2003-07-01 → 2003-06-30 (-1d) |  |  |  |  |
| 39 | Menu enseignants | 2003-07-02 → 2003-07-01 (-1d) | 2003-07-03 → 2003-07-02 (-1d) |  |  |  |  |
| 40 | **Actions enseignants** | 2003-07-04 → 2003-07-03 (-1d) | 2003-07-09 → 2003-07-08 (-1d) |  |  |  |  |
| 41 | Codage | 2003-07-04 → 2003-07-03 (-1d) | 2003-07-07 → 2003-07-04 (-3d) |  |  |  |  |
| 42 | Test | 2003-07-08 → 2003-07-07 (-1d) | 2003-07-09 → 2003-07-08 (-1d) |  |  |  |  |
| 43 | Menu groupe | 2003-07-10 → 2003-07-09 (-1d) | 2003-07-11 → 2003-07-10 (-1d) |  |  |  |  |
| 44 | **Actions groupes** | 2003-07-14 → 2003-07-11 (-3d) | 2003-07-17 → 2003-07-16 (-1d) |  |  |  |  |
| 45 | Codage | 2003-07-14 → 2003-07-11 (-3d) | 2003-07-15 → 2003-07-14 (-1d) |  |  |  |  |
| 46 | Test | 2003-07-16 → 2003-07-15 (-1d) | 2003-07-17 → 2003-07-16 (-1d) |  |  |  |  |
| 47 | **Grille horaire Adaptée** | 2003-07-18 → 2003-07-17 (-1d) | 2003-07-23 → 2003-07-22 (-1d) |  |  |  |  |
| 48 | Codage | 2003-07-18 → 2003-07-17 (-1d) | 2003-07-21 → 2003-07-18 (-3d) |  |  |  |  |
| 49 | Test | 2003-07-22 → 2003-07-21 (-1d) | 2003-07-23 → 2003-07-22 (-1d) |  |  |  |  |
| 50 | Fin Livrable 3 | 2003-07-23 → 2003-07-22 (-1d) | 2003-07-23 → 2003-07-22 (-1d) |  |  |  |  |
| 51 | **Livrable 4 Construction Horaire** | 2003-07-24 → 2003-07-23 (-1d) | 2003-08-18 → 2003-08-15 (-3d) |  |  |  |  |
| 52 | **Affectation initiale 2** | 2003-07-24 → 2003-07-23 (-1d) | 2003-07-31 → 2003-07-30 (-1d) |  |  |  |  |
| 53 | Codage actions Affectation | 2003-07-24 → 2003-07-23 (-1d) | 2003-07-25 → 2003-07-24 (-1d) |  |  |  |  |
| 54 | Test | 2003-07-28 → 2003-07-25 (-3d) | 2003-07-29 → 2003-07-28 (-1d) |  |  |  |  |
| 55 | Calcul de conflits | 2003-07-30 → 2003-07-29 (-1d) | 2003-07-31 → 2003-07-30 (-1d) |  |  |  |  |
| 56 | **Conflits enseignants** | 2003-08-01 → 2003-07-31 (-1d) | 2003-08-06 → 2003-08-05 (-1d) |  |  |  |  |
| 57 | Actions associées conflits enseigents | 2003-08-01 → 2003-07-31 (-1d) | 2003-08-04 → 2003-08-01 (-3d) |  |  |  |  |
| 58 | Test | 2003-08-05 → 2003-08-04 (-1d) | 2003-08-06 → 2003-08-05 (-1d) |  |  |  |  |
| 59 | **Conflits étudiants** | 2003-08-07 → 2003-08-06 (-1d) | 2003-08-12 → 2003-08-11 (-1d) |  |  |  |  |
| 60 | Actions associées conflits étudiants | 2003-08-07 → 2003-08-06 (-1d) | 2003-08-08 → 2003-08-07 (-1d) |  |  |  |  |
| 61 | Test | 2003-08-11 → 2003-08-08 (-3d) | 2003-08-12 → 2003-08-11 (-1d) |  |  |  |  |
| 62 | **Conflits locaux** | 2003-08-13 → 2003-08-12 (-1d) | 2003-08-18 → 2003-08-15 (-3d) |  |  |  |  |
| 63 | Actions associées conflits locaux | 2003-08-13 → 2003-08-12 (-1d) | 2003-08-14 → 2003-08-13 (-1d) |  |  |  |  |
| 64 | Test | 2003-08-15 → 2003-08-14 (-1d) | 2003-08-18 → 2003-08-15 (-3d) |  |  |  |  |
| 65 | **Actions associées conflits et interface** | 2003-08-07 → 2003-08-06 (-1d) | 2003-08-12 → 2003-08-11 (-1d) |  |  |  |  |
| 66 | Codage | 2003-08-07 → 2003-08-06 (-1d) | 2003-08-08 → 2003-08-07 (-1d) |  |  |  |  |
| 67 | Test | 2003-08-11 → 2003-08-08 (-3d) | 2003-08-12 → 2003-08-11 (-1d) |  |  |  |  |
| 68 | Dialoges amélioration manuelle | 2003-07-24 → 2003-07-23 (-1d) | 2003-07-25 → 2003-07-24 (-1d) |  |  |  |  |
| 69 | **Actions amélioration manuelle** | 2003-07-28 → 2003-07-25 (-3d) | 2003-07-31 → 2003-07-30 (-1d) |  |  |  |  |
| 70 | Codage | 2003-07-28 → 2003-07-25 (-3d) | 2003-07-29 → 2003-07-28 (-1d) |  |  |  |  |
| 71 | Test | 2003-07-30 → 2003-07-29 (-1d) | 2003-07-31 → 2003-07-30 (-1d) |  |  |  |  |
| 72 | Exporter données | 2003-08-01 → 2003-07-31 (-1d) | 2003-08-04 → 2003-08-01 (-3d) |  |  |  |  |
| 73 | **Actions exporter données** | 2003-08-05 → 2003-08-04 (-1d) | 2003-08-14 → 2003-08-13 (-1d) |  |  |  |  |
| 74 | Codage | 2003-08-05 → 2003-08-04 (-1d) | 2003-08-06 → 2003-08-05 (-1d) |  |  |  |  |
| 75 | Test | 2003-08-13 → 2003-08-12 (-1d) | 2003-08-14 → 2003-08-13 (-1d) |  |  |  |  |
| 76 | Fin Livrable 4 | 2003-08-14 → 2003-08-13 (-1d) | 2003-08-14 → 2003-08-13 (-1d) |  |  |  |  |
| 77 | **Livrable 5 Optimisation + Rapports** | 2003-08-15 → 2003-08-14 (-1d) | 2003-09-03 → 2003-09-02 (-1d) |  |  |  |  |
| 78 | Optimisation | 2003-08-19 → 2003-08-18 (-1d) | 2003-08-20 → 2003-08-19 (-1d) |  |  | 12d → 13d |  |
| 79 | Codage | 2003-08-21 → 2003-08-20 (-1d) | 2003-08-22 → 2003-08-21 (-1d) |  |  |  |  |
| 80 | Test | 2003-08-25 → 2003-08-22 (-3d) | 2003-08-26 → 2003-08-25 (-1d) |  |  |  |  |
| 81 | Dialog de rapports | 2003-08-15 → 2003-08-14 (-1d) | 2003-08-18 → 2003-08-15 (-3d) |  |  |  |  |
| 82 | Rapport complet | 2003-08-19 → 2003-08-18 (-1d) | 2003-08-20 → 2003-08-19 (-1d) |  |  |  |  |
| 83 | Rapport conflits | 2003-08-21 → 2003-08-20 (-1d) | 2003-08-22 → 2003-08-21 (-1d) |  |  |  |  |
| 84 | Rapport importation | 2003-08-25 → 2003-08-22 (-3d) | 2003-08-26 → 2003-08-25 (-1d) |  |  |  |  |
| 85 | Rapport liste d'activités | 2003-08-27 → 2003-08-26 (-1d) | 2003-08-28 → 2003-08-27 (-1d) |  |  |  |  |

| ID | Task | Start | Finish |
| --- | --- | --- | --- |
| 86 | Rapport groupes | 2003-08-29 → 2003-08-28 (-1d) | 2003-09-01 → 2003-08-29 (-3d) |
| 87 | Rapport complet & ranger | 2003-09-02 → 2003-09-01 (-1d) | 2003-09-03 → 2003-09-02 (-1d) |
| 88 | Fin Livrable 5 | 2003-09-03 → 2003-09-02 (-1d) | 2003-09-03 → 2003-09-02 (-1d) |
| 89 | **Livrable 6 Maintenance** | 2003-09-04 → 2003-09-03 (-1d) | 2003-09-11 → 2003-09-10 (-1d) |
| 90 | Compéter les menus | 2003-09-04 → 2003-09-03 (-1d) | 2003-09-05 → 2003-09-04 (-1d) |
| 91 | Compléter lesrapports | 2003-09-08 → 2003-09-05 (-3d) | 2003-09-09 → 2003-09-08 (-1d) |
| 92 | Ajout des fonctionnalitées | 2003-09-10 → 2003-09-09 (-1d) | 2003-09-11 → 2003-09-10 (-1d) |

## Version 6 (saved 2003-06-11)

Last finish 2003-09-10 → 2003-09-11 (+1d). Complete tasks 12 → 14.

Added:

| ID | Task | Duration | Start | Finish | Predecessors | Resources |
| --- | --- | --- | --- | --- | --- | --- |
| 20 | Test de TTStructure | 2d? | 2003-06-09 | 2003-06-10 | 19 | Yannick |
| 22 | Modif DDocument | 1d? | 2003-05-23 | 2003-05-23 |  | Alex |

Changed:

| ID | Task | Start | Finish | Duration | Complete | Total float | Predecessors |
| --- | --- | --- | --- | --- | --- | --- | --- |
| 7 | **Librable 2 Menu Fichier** |  | 2003-06-12 → 2003-06-13 (+1d) | 15d? → 16d? | 36% → 42% |  |  |
| 18 | Lire/Écrire Grille horaire | 2003-05-30 A | 2003-06-03 A |  | 0% → 100% | 69d → none |  |
| 19 | Construction TTStructure |  | 2003-06-05 → 2003-06-06 (+1d) | 2d? → 3d? |  | 69d → 67d |  |
| 21 | Menu Nouvelle grille horaire | 2003-06-05 A | 2003-06-06 → 2003-06-05 A (-1d) | 2d → 1d | 0% → 100% | 68d → none |  |
| 23 | Actions Nouvelle grille | 2003-06-06 → 2003-06-10 (+4d) | 2003-06-11 → 2003-06-13 (+2d) |  |  | 43d → 42d |  |
| 24 | Menu Modifier grille horaire | 2003-06-09 → 2003-06-06 (-3d) | 2003-06-10 → 2003-06-09 (-1d) |  |  | 42d → 44d |  |
| 25 | Save grille horaire | 2003-06-11 → 2003-06-10 (-1d) | 2003-06-12 → 2003-06-11 (-1d) |  |  | 42d → 44d |  |
| 26 | Tool bar modif grille | 2003-05-29 → 2003-06-02 (+4d) | 2003-06-04 → 2003-06-06 (+2d) |  |  | 48d → 42d | none → 22 |
| 27 | Actions Toolbar | 2003-06-05 → 2003-06-09 (+4d) | 2003-06-11 → 2003-06-13 (+2d) |  |  | 65d → 42d |  |
| 28 | Fin Livrable 2 | 2003-06-12 → 2003-06-13 (+1d) | 2003-06-12 → 2003-06-13 (+1d) |  |  |  |  |
| 29 | **Livrable 3 Changements en mémoire** | 2003-06-13 → 2003-06-16 (+3d) | 2003-07-22 → 2003-07-23 (+1d) |  |  |  |  |
| 30 | **Affectation initiale 1** | 2003-06-13 → 2003-06-16 (+3d) | 2003-07-10 → 2003-07-11 (+1d) |  |  |  |  |
| 31 | Codage | 2003-06-13 → 2003-06-16 (+3d) | 2003-06-26 → 2003-06-27 (+1d) |  |  |  |  |
| 32 | Test | 2003-06-27 → 2003-06-30 (+3d) | 2003-07-10 → 2003-07-11 (+1d) |  |  |  |  |
| 33 | Menu activités | 2003-06-13 → 2003-06-16 (+3d) | 2003-06-16 → 2003-06-17 (+1d) |  |  |  |  |
| 34 | **Actions Activités** | 2003-06-17 → 2003-06-18 (+1d) | 2003-06-20 → 2003-06-23 (+3d) |  |  |  |  |
| 35 | Codage | 2003-06-17 → 2003-06-18 (+1d) | 2003-06-18 → 2003-06-19 (+1d) |  |  |  |  |
| 36 | Test | 2003-06-19 → 2003-06-20 (+1d) | 2003-06-20 → 2003-06-23 (+3d) |  |  |  |  |
| 37 | Menu blocs | 2003-06-23 → 2003-06-24 (+1d) | 2003-06-24 → 2003-06-25 (+1d) |  |  |  |  |
| 38 | **Actions blocs** | 2003-06-25 → 2003-06-26 (+1d) | 2003-06-30 → 2003-07-01 (+1d) |  |  |  |  |
| 39 | Codage | 2003-06-25 → 2003-06-26 (+1d) | 2003-06-26 → 2003-06-27 (+1d) |  |  |  |  |
| 40 | Test | 2003-06-27 → 2003-06-30 (+3d) | 2003-06-30 → 2003-07-01 (+1d) |  |  |  |  |
| 41 | Menu enseignants | 2003-07-01 → 2003-07-02 (+1d) | 2003-07-02 → 2003-07-03 (+1d) |  |  |  |  |
| 42 | **Actions enseignants** | 2003-07-03 → 2003-07-04 (+1d) | 2003-07-08 → 2003-07-09 (+1d) |  |  |  |  |
| 43 | Codage | 2003-07-03 → 2003-07-04 (+1d) | 2003-07-04 → 2003-07-07 (+3d) |  |  |  |  |
| 44 | Test | 2003-07-07 → 2003-07-08 (+1d) | 2003-07-08 → 2003-07-09 (+1d) |  |  |  |  |
| 45 | Menu groupe | 2003-07-09 → 2003-07-10 (+1d) | 2003-07-10 → 2003-07-11 (+1d) |  |  |  |  |
| 46 | **Actions groupes** | 2003-07-11 → 2003-07-14 (+3d) | 2003-07-16 → 2003-07-17 (+1d) |  |  |  |  |
| 47 | Codage | 2003-07-11 → 2003-07-14 (+3d) | 2003-07-14 → 2003-07-15 (+1d) |  |  |  |  |
| 48 | Test | 2003-07-15 → 2003-07-16 (+1d) | 2003-07-16 → 2003-07-17 (+1d) |  |  |  |  |
| 49 | **Grille horaire Adaptée** | 2003-07-17 → 2003-07-18 (+1d) | 2003-07-22 → 2003-07-23 (+1d) |  |  |  |  |
| 50 | Codage | 2003-07-17 → 2003-07-18 (+1d) | 2003-07-18 → 2003-07-21 (+3d) |  |  |  |  |
| 51 | Test | 2003-07-21 → 2003-07-22 (+1d) | 2003-07-22 → 2003-07-23 (+1d) |  |  |  |  |
| 52 | Fin Livrable 3 | 2003-07-22 → 2003-07-23 (+1d) | 2003-07-22 → 2003-07-23 (+1d) |  |  |  |  |
| 53 | **Livrable 4 Construction Horaire** | 2003-07-23 → 2003-07-24 (+1d) | 2003-08-15 → 2003-08-18 (+3d) |  |  |  |  |
| 54 | **Affectation initiale 2** | 2003-07-23 → 2003-07-24 (+1d) | 2003-07-30 → 2003-07-31 (+1d) |  |  |  |  |
| 55 | Codage actions Affectation | 2003-07-23 → 2003-07-24 (+1d) | 2003-07-24 → 2003-07-25 (+1d) |  |  |  |  |
| 56 | Test | 2003-07-25 → 2003-07-28 (+3d) | 2003-07-28 → 2003-07-29 (+1d) |  |  |  |  |
| 57 | Calcul de conflits | 2003-07-29 → 2003-07-30 (+1d) | 2003-07-30 → 2003-07-31 (+1d) |  |  |  |  |
| 58 | **Conflits enseignants** | 2003-07-31 → 2003-08-01 (+1d) | 2003-08-05 → 2003-08-06 (+1d) |  |  |  |  |
| 59 | Actions associées conflits enseigents | 2003-07-31 → 2003-08-01 (+1d) | 2003-08-01 → 2003-08-04 (+3d) |  |  |  |  |
| 60 | Test | 2003-08-04 → 2003-08-05 (+1d) | 2003-08-05 → 2003-08-06 (+1d) |  |  |  |  |
| 61 | **Conflits étudiants** | 2003-08-06 → 2003-08-07 (+1d) | 2003-08-11 → 2003-08-12 (+1d) |  |  |  |  |
| 62 | Actions associées conflits étudiants | 2003-08-06 → 2003-08-07 (+1d) | 2003-08-07 → 2003-08-08 (+1d) |  |  |  |  |
| 63 | Test | 2003-08-08 → 2003-08-11 (+3d) | 2003-08-11 → 2003-08-12 (+1d) |  |  |  |  |
| 64 | **Conflits locaux** | 2003-08-12 → 2003-08-13 (+1d) | 2003-08-15 → 2003-08-18 (+3d) |  |  |  |  |
| 65 | Actions associées conflits locaux | 2003-08-12 → 2003-08-13 (+1d) | 2003-08-13 → 2003-08-14 (+1d) |  |  |  |  |
| 66 | Test | 2003-08-14 → 2003-08-15 (+1d) | 2003-08-15 → 2003-08-18 (+3d) |  |  |  |  |
| 67 | **Actions associées conflits et interface** | 2003-08-06 → 2003-08-07 (+1d) | 2003-08-11 → 2003-08-12 (+1d) |  |  |  |  |
| 68 | Codage | 2003-08-06 → 2003-08-07 (+1d) | 2003-08-07 → 2003-08-08 (+1d) |  |  |  |  |
| 69 | Test | 2003-08-08 → 2003-08-11 (+3d) | 2003-08-11 → 2003-08-12 (+1d) |  |  |  |  |
| 70 | Dialoges amélioration manuelle | 2003-07-23 → 2003-07-24 (+1d) | 2003-07-24 → 2003-07-25 (+1d) |  |  |  |  |
| 71 | **Actions amélioration manuelle** | 2003-07-25 → 2003-07-28 (+3d) | 2003-07-30 → 2003-07-31 (+1d) |  |  |  |  |
| 72 | Codage | 2003-07-25 → 2003-07-28 (+3d) | 2003-07-28 → 2003-07-29 (+1d) |  |  |  |  |
| 73 | Test | 2003-07-29 → 2003-07-30 (+1d) | 2003-07-30 → 2003-07-31 (+1d) |  |  |  |  |
| 74 | Exporter données | 2003-07-31 → 2003-08-01 (+1d) | 2003-08-01 → 2003-08-04 (+3d) |  |  |  |  |
| 75 | **Actions exporter données** | 2003-08-04 → 2003-08-05 (+1d) | 2003-08-13 → 2003-08-14 (+1d) |  |  |  |  |
| 76 | Codage | 2003-08-04 → 2003-08-05 (+1d) | 2003-08-05 → 2003-08-06 (+1d) |  |  |  |  |
| 77 | Test | 2003-08-12 → 2003-08-13 (+1d) | 2003-08-13 → 2003-08-14 (+1d) |  |  |  |  |
| 78 | Fin Livrable 4 | 2003-08-13 → 2003-08-14 (+1d) | 2003-08-13 → 2003-08-14 (+1d) |  |  |  |  |
| 79 | **Livrable 5 Optimisation + Rapports** | 2003-08-14 → 2003-08-15 (+1d) | 2003-09-02 → 2003-09-03 (+1d) |  |  |  |  |
| 80 | Optimisation | 2003-08-18 → 2003-08-19 (+1d) | 2003-08-19 → 2003-08-20 (+1d) |  |  | 13d → 12d |  |
| 81 | Codage | 2003-08-20 → 2003-08-21 (+1d) | 2003-08-21 → 2003-08-22 (+1d) |  |  |  |  |
| 82 | Test | 2003-08-22 → 2003-08-25 (+3d) | 2003-08-25 → 2003-08-26 (+1d) |  |  |  |  |
| 83 | Dialog de rapports | 2003-08-14 → 2003-08-15 (+1d) | 2003-08-15 → 2003-08-18 (+3d) |  |  |  |  |
| 84 | Rapport complet | 2003-08-18 → 2003-08-19 (+1d) | 2003-08-19 → 2003-08-20 (+1d) |  |  |  |  |
| 85 | Rapport conflits | 2003-08-20 → 2003-08-21 (+1d) | 2003-08-21 → 2003-08-22 (+1d) |  |  |  |  |
| 86 | Rapport importation | 2003-08-22 → 2003-08-25 (+3d) | 2003-08-25 → 2003-08-26 (+1d) |  |  |  |  |
| 87 | Rapport liste d'activités | 2003-08-26 → 2003-08-27 (+1d) | 2003-08-27 → 2003-08-28 (+1d) |  |  |  |  |
| 88 | Rapport groupes | 2003-08-28 → 2003-08-29 (+1d) | 2003-08-29 → 2003-09-01 (+3d) |  |  |  |  |

| ID | Task | Start | Finish |
| --- | --- | --- | --- |
| 89 | Rapport complet & ranger | 2003-09-01 → 2003-09-02 (+1d) | 2003-09-02 → 2003-09-03 (+1d) |
| 90 | Fin Livrable 5 | 2003-09-02 → 2003-09-03 (+1d) | 2003-09-02 → 2003-09-03 (+1d) |
| 91 | **Livrable 6 Maintenance** | 2003-09-03 → 2003-09-04 (+1d) | 2003-09-10 → 2003-09-11 (+1d) |
| 92 | Compéter les menus | 2003-09-03 → 2003-09-04 (+1d) | 2003-09-04 → 2003-09-05 (+1d) |
| 93 | Compléter lesrapports | 2003-09-05 → 2003-09-08 (+3d) | 2003-09-08 → 2003-09-09 (+1d) |
| 94 | Ajout des fonctionnalitées | 2003-09-09 → 2003-09-10 (+1d) | 2003-09-10 → 2003-09-11 (+1d) |

## Version 7 (saved 2003-06-16)

Last finish 2003-09-11 → 2003-10-07 (+26d).

Added:

| ID | Task | Duration | Start | Finish | Predecessors | Resources |
| --- | --- | --- | --- | --- | --- | --- |
| 30 | **SetOfEvents** | 4d? | 2003-06-17 | 2003-06-20 |  |  |
| 31 | Construction | 2d? | 2003-06-17 | 2003-06-19 |  | Yannick |
| 33 | **Matrice conflits étudiants** | 5d? | 2003-06-23 | 2003-06-27 |  |  |
| 34 | Construction | 2d? | 2003-06-23 | 2003-06-26 |  | Yannick |
| 35 | Test | 1d? | 2003-06-27 | 2003-06-27 | 34 | Yannick |
| 36 | **Conflits étudiants** | 2d? | 2003-06-30 | 2003-07-01 |  |  |
| 37 | Construction | 1d? | 2003-06-30 | 2003-06-30 |  | Yannick |
| 38 | Test | 1d? | 2003-07-01 | 2003-07-01 | 37 | Yannick |
| 39 | **Conflits locaux** | 2d? | 2003-07-03 | 2003-07-04 |  |  |
| 40 | Construction | 1d? | 2003-07-03 | 2003-07-03 |  | Yannick |
| 41 | Test | 1d? | 2003-07-04 | 2003-07-04 | 40 | Yannick |
| 42 | **Conflits enseignants** | 2d? | 2003-07-07 | 2003-07-08 |  |  |
| 43 | Construction | 1d? | 2003-07-07 | 2003-07-07 |  | Yannick |
| 44 | Test | 1d? | 2003-07-08 | 2003-07-08 | 43 | Yannick |
| 45 | **Affectation événement** | 2d? | 2003-07-10 | 2003-07-11 |  |  |
| 46 | Construction | 1d? | 2003-07-10 | 2003-07-10 |  | Yannick |
| 47 | Test | 1d? | 2003-07-11 | 2003-07-11 | 46 | Yannick |
| 48 | **Matrice de groupes** | 2d? | 2003-07-14 | 2003-07-15 |  |  |
| 49 | Construction | 1d? | 2003-07-14 | 2003-07-14 |  | Yannick |
| 50 | Test | 1d? | 2003-07-15 | 2003-07-15 | 49 | Yannick |
| 51 | **Conflits étudiants** | 2d? | 2003-07-17 | 2003-07-18 |  |  |
| 52 | Construction | 1d? | 2003-07-17 | 2003-07-17 |  | Yannick |
| 53 | Test | 1d? | 2003-07-18 | 2003-07-18 | 52 | Yannick |
| 54 | **Balancement de groupes** | 2d? | 2003-07-21 | 2003-07-22 |  |  |
| 55 | Construction | 1d? | 2003-07-21 | 2003-07-21 |  | Yannick |
| 56 | Test | 1d? | 2003-07-22 | 2003-07-22 | 55 | Yannick |
| 57 | **Affectation initiale** | 2d? | 2003-07-24 | 2003-07-25 |  |  |
| 58 | Construction | 1d? | 2003-07-24 | 2003-07-24 |  | Yannick |
| 59 | Test | 1d? | 2003-07-25 | 2003-07-25 | 58 | Yannick |
| 60 | **Amélioration manuelle** | 2d? | 2003-07-28 | 2003-07-29 |  |  |
| 61 | Construction | 1d? | 2003-07-28 | 2003-07-28 |  | Yannick |
| 62 | Test | 1d? | 2003-07-29 | 2003-07-29 | 61 | Yannick |

Removed: 30 Affectation initiale 1; 31 Codage

Changed:

| ID | Task | Start | Finish | Duration | Total float | Predecessors | Other |
| --- | --- | --- | --- | --- | --- | --- | --- |
| 7 | **Librable 2 Menu Fichier** |  | 2003-06-13 → 2003-06-16 (+3d) | 16d? → 17d? | 64d → 81d |  |  |
| 13 | Menu Fermer + Close Win |  |  |  |  | 12 → none |  |
| 22 | Modif DDocument | 2003-05-23 → 2003-05-26 (+3d) | 2003-05-23 → 2003-05-26 (+3d) |  | 43d → 55d |  |  |
| 23 | Actions Nouvelle grille | 2003-06-10 → 2003-06-11 (+1d) | 2003-06-13 → 2003-06-16 (+3d) |  | 42d → 53d |  |  |
| 26 | Tool bar modif grille | 2003-06-02 → 2003-05-29 (-4d) | 2003-06-06 → 2003-06-04 (-2d) |  | 42d → 55d |  |  |
| 27 | Actions Toolbar | 2003-06-09 → 2003-06-05 (-4d) | 2003-06-13 → 2003-06-11 (-2d) |  | 42d → 56d |  |  |
| 28 | Fin Livrable 2 | 2003-06-13 → 2003-06-16 (+3d) | 2003-06-13 → 2003-06-16 (+3d) |  | 42d → 54d |  |  |
| 29 | **Livrable 3 Changements en mémoire** | 2003-06-16 → 2003-06-17 (+1d) | 2003-07-23 → 2003-08-05 (+13d) | 28d? → 36d? | 36d → 45d |  |  |
| 32 | Test | 2003-06-30 → 2003-06-20 (-10d) | 2003-07-11 → 2003-06-20 (-21d) | 10d? → 1d? | 44d → 77d | none → 31 | baseline start 2003-07-01 → none; baseline finish 2003-07-15 → none |
| 63 | Menu activités | 2003-06-16 → 2003-07-28 (+42d) | 2003-06-17 → 2003-07-29 (+42d) |  | 60d → 50d | none → 76 | constraint none → start no earlier than 2003-07-15 |
| 64 | **Actions Activités** | 2003-06-18 → 2003-06-17 (-1d) |  | 4d → 5d | 58d → 76d |  |  |
| 65 | Codage | 2003-06-18 → 2003-06-17 (-1d) |  |  | 60d → 78d |  |  |
| 67 | Menu blocs | 2003-06-24 → 2003-06-26 (+2d) | 2003-06-25 → 2003-06-27 (+2d) |  | 54d → 70d |  |  |
| 68 | **Actions blocs** | 2003-06-26 → 2003-06-30 (+4d) | 2003-07-01 → 2003-07-04 (+3d) | 4d → 5d | 52d → 67d |  |  |
| 69 | Codage | 2003-06-26 → 2003-06-30 (+4d) | 2003-06-27 → 2003-07-01 (+4d) |  | 54d → 70d |  |  |
| 70 | Test | 2003-06-30 → 2003-07-03 (+3d) | 2003-07-01 → 2003-07-04 (+3d) |  | 52d → 67d |  |  |
| 71 | Menu enseignants | 2003-07-02 → 2003-07-07 (+5d) | 2003-07-03 → 2003-07-08 (+5d) |  | 48d → 63d |  |  |
| 72 | **Actions enseignants** | 2003-07-04 → 2003-07-10 (+6d) | 2003-07-09 → 2003-07-15 (+6d) |  | 46d → 60d |  |  |
| 73 | Codage | 2003-07-04 → 2003-07-10 (+6d) | 2003-07-07 → 2003-07-11 (+4d) |  | 48d → 62d |  |  |
| 74 | Test | 2003-07-08 → 2003-07-14 (+6d) | 2003-07-09 → 2003-07-15 (+6d) |  | 46d → 60d |  |  |
| 75 | Menu groupe | 2003-07-10 → 2003-07-17 (+7d) | 2003-07-11 → 2003-07-18 (+7d) |  | 42d → 52d |  |  |
| 76 | **Actions groupes** | 2003-07-14 → 2003-07-21 (+7d) | 2003-07-17 → 2003-07-25 (+8d) | 4d → 5d | 40d → 50d |  |  |
| 77 | Codage | 2003-07-14 → 2003-07-21 (+7d) | 2003-07-15 → 2003-07-22 (+7d) |  | 42d → 53d |  |  |
| 78 | Test | 2003-07-16 → 2003-07-24 (+8d) | 2003-07-17 → 2003-07-25 (+8d) |  | 40d → 50d |  |  |
| 79 | **Grille horaire Adaptée** | 2003-07-18 → 2003-07-31 (+13d) | 2003-07-23 → 2003-08-05 (+13d) |  | 18d → 22d |  |  |
| 80 | Codage | 2003-07-18 → 2003-07-31 (+13d) | 2003-07-21 → 2003-08-01 (+11d) |  | 18d → 22d |  |  |
| 81 | Test | 2003-07-22 → 2003-08-04 (+13d) | 2003-07-23 → 2003-08-05 (+13d) |  | 18d → 23d |  |  |
| 82 | Fin Livrable 3 | 2003-07-23 → 2003-08-05 (+13d) | 2003-07-23 → 2003-08-05 (+13d) |  | 18d → 23d |  |  |
| 83 | **Livrable 4 Construction Horaire** | 2003-07-24 → 2003-08-07 (+14d) | 2003-08-18 → 2003-09-05 (+18d) | 18d? → 22d? | 18d → 22d |  |  |
| 84 | **Affectation initiale 2** | 2003-07-24 → 2003-08-07 (+14d) | 2003-07-31 → 2003-08-15 (+15d) | 6d? → 7d? | 28d → 35d |  |  |
| 85 | Codage actions Affectation | 2003-07-24 → 2003-08-07 (+14d) | 2003-07-25 → 2003-08-08 (+14d) |  | 34d → 42d |  |  |
| 86 | Test | 2003-07-28 → 2003-08-11 (+14d) | 2003-07-29 → 2003-08-12 (+14d) |  | 32d → 40d |  |  |
| 87 | Calcul de conflits | 2003-07-30 → 2003-08-14 (+15d) | 2003-07-31 → 2003-08-15 (+15d) |  | 24d → 30d |  |  |
| 88 | **Conflits enseignants** | 2003-08-01 → 2003-08-18 (+17d) | 2003-08-06 → 2003-08-22 (+16d) | 4d? → 5d? | 24d → 30d |  |  |
| 89 | Actions associées conflits enseigents | 2003-08-01 → 2003-08-18 (+17d) | 2003-08-04 → 2003-08-19 (+15d) |  | 24d → 30d |  |  |
| 90 | Test | 2003-08-05 → 2003-08-21 (+16d) | 2003-08-06 → 2003-08-22 (+16d) |  | 24d → 30d |  |  |
| 91 | **Conflits étudiants** | 2003-08-07 → 2003-08-25 (+18d) | 2003-08-12 → 2003-08-29 (+17d) | 4d? → 5d? | 22d → 27d |  |  |
| 92 | Actions associées conflits étudiants | 2003-08-07 → 2003-08-25 (+18d) | 2003-08-08 → 2003-08-26 (+18d) |  | 24d → 30d |  |  |
| 93 | Test | 2003-08-11 → 2003-08-28 (+17d) | 2003-08-12 → 2003-08-29 (+17d) |  | 22d → 27d |  |  |
| 94 | **Conflits locaux** | 2003-08-13 → 2003-09-01 (+19d) | 2003-08-18 → 2003-09-05 (+18d) | 4d? → 5d? | 18d → 22d |  |  |
| 95 | Actions associées conflits locaux | 2003-08-13 → 2003-09-01 (+19d) | 2003-08-14 → 2003-09-02 (+19d) |  | 20d → 25d |  |  |
| 96 | Test | 2003-08-15 → 2003-09-04 (+20d) | 2003-08-18 → 2003-09-05 (+18d) |  | 18d → 22d |  |  |
| 97 | **Actions associées conflits et interface** | 2003-08-07 → 2003-08-25 (+18d) | 2003-08-12 → 2003-08-29 (+17d) | 4d? → 5d? | 22d → 27d |  |  |
| 98 | Codage | 2003-08-07 → 2003-08-25 (+18d) | 2003-08-08 → 2003-08-26 (+18d) |  | 24d → 30d |  |  |
| 99 | Test | 2003-08-11 → 2003-08-28 (+17d) | 2003-08-12 → 2003-08-29 (+17d) |  | 22d → 27d |  |  |
| 100 | Dialoges amélioration manuelle | 2003-07-24 → 2003-08-07 (+14d) | 2003-07-25 → 2003-08-08 (+14d) |  | 34d → 42d |  |  |
| 101 | **Actions amélioration manuelle** | 2003-07-28 → 2003-08-11 (+14d) | 2003-07-31 → 2003-08-15 (+15d) | 4d? → 5d? | 30d → 37d |  |  |
| 102 | Codage | 2003-07-28 → 2003-08-11 (+14d) | 2003-07-29 → 2003-08-12 (+14d) |  | 32d → 40d |  |  |
| 103 | Test | 2003-07-30 → 2003-08-14 (+15d) | 2003-07-31 → 2003-08-15 (+15d) |  | 30d → 37d |  |  |
| 104 | Exporter données | 2003-08-01 → 2003-08-18 (+17d) | 2003-08-04 → 2003-08-19 (+15d) |  | 28d → 35d |  |  |
| 105 | **Actions exporter données** | 2003-08-05 → 2003-08-21 (+16d) | 2003-08-14 → 2003-09-02 (+19d) | 8d? → 9d? | 10d → 12d |  |  |
| 106 | Codage | 2003-08-05 → 2003-08-21 (+16d) | 2003-08-06 → 2003-08-22 (+16d) |  | 26d → 32d |  |  |
| 107 | Test | 2003-08-13 → 2003-09-01 (+19d) | 2003-08-14 → 2003-09-02 (+19d) |  | 4d → 5d |  |  |
| 108 | Fin Livrable 4 | 2003-08-14 → 2003-09-02 (+19d) | 2003-08-14 → 2003-09-02 (+19d) |  | 4d → 6d |  |  |
| 109 | **Livrable 5 Optimisation + Rapports** | 2003-08-15 → 2003-09-04 (+20d) | 2003-09-03 → 2003-09-26 (+23d) | 14d? → 17d? | 4d → 5d |  |  |
| 110 | Optimisation | 2003-08-19 → 2003-09-08 (+20d) | 2003-08-20 → 2003-09-09 (+20d) |  | 12d → 15d |  |  |
| 111 | Codage | 2003-08-21 → 2003-09-11 (+21d) | 2003-08-22 → 2003-09-12 (+21d) |  | 14d → 17d |  |  |
| 112 | Test | 2003-08-25 → 2003-09-15 (+21d) | 2003-08-26 → 2003-09-16 (+21d) |  | 12d → 15d |  |  |
| 113 | Dialog de rapports | 2003-08-15 → 2003-09-04 (+20d) | 2003-08-18 → 2003-09-05 (+18d) |  | 4d → 5d |  |  |
| 114 | Rapport complet | 2003-08-19 → 2003-09-08 (+20d) | 2003-08-20 → 2003-09-09 (+20d) |  | 4d → 5d |  |  |
| 115 | Rapport conflits | 2003-08-21 → 2003-09-11 (+21d) | 2003-08-22 → 2003-09-12 (+21d) |  | 4d → 5d |  |  |
| 116 | Rapport importation | 2003-08-25 → 2003-09-15 (+21d) | 2003-08-26 → 2003-09-16 (+21d) |  | 4d → 5d |  |  |
| 117 | Rapport liste d'activités | 2003-08-27 → 2003-09-18 (+22d) | 2003-08-28 → 2003-09-19 (+22d) |  | 4d → 5d |  |  |
| 118 | Rapport groupes | 2003-08-29 → 2003-09-22 (+24d) | 2003-09-01 → 2003-09-23 (+22d) |  | 4d → 5d |  |  |
| 119 | Rapport complet & ranger | 2003-09-02 → 2003-09-25 (+23d) | 2003-09-03 → 2003-09-26 (+23d) |  | 4d → 5d |  |  |
| 120 | Fin Livrable 5 | 2003-09-03 → 2003-09-26 (+23d) | 2003-09-03 → 2003-09-26 (+23d) |  | 4d → 5d |  |  |
| 121 | **Livrable 6 Maintenance** | 2003-09-04 → 2003-09-29 (+25d) | 2003-09-11 → 2003-10-07 (+26d) | 6d? → 7d? |  |  |  |
| 122 | Compéter les menus | 2003-09-04 → 2003-09-29 (+25d) | 2003-09-05 → 2003-09-30 (+25d) |  | 4d → 5d |  |  |
| 123 | Compléter lesrapports | 2003-09-08 → 2003-10-02 (+24d) | 2003-09-09 → 2003-10-03 (+24d) |  |  |  |  |
| 124 | Ajout des fonctionnalitées | 2003-09-10 → 2003-10-06 (+26d) | 2003-09-11 → 2003-10-07 (+26d) |  |  |  |  |

## Version 8 (saved 2003-06-26)

Last finish 2003-10-07 → 2003-10-21 (+14d). Complete tasks 14 → 18.

Changed:

| ID | Task | Start | Finish | Duration | Complete | Total float | Predecessors |
| --- | --- | --- | --- | --- | --- | --- | --- |
| 7 | **Librable 2 Menu Fichier** |  | 2003-06-16 → 2003-06-27 (+11d) | 17d? → 26d? | 42% → 79% | 81d → 82d |  |
| 19 | Construction TTStructure | 2003-06-04 A | 2003-06-06 → 2003-06-10 A (+4d) | 3d? → 5d | 0% → 100% | 84d → none |  |
| 20 | Test de TTStructure | 2003-06-09 → 2003-06-19 (+10d) | 2003-06-10 → 2003-06-27 (+17d) | 2d? → 4d? |  | 85d → 55d |  |
| 23 | Actions Nouvelle grille | 2003-06-11 A | 2003-06-16 → 2003-06-17 A (+1d) | 4d → 5d | 0% → 100% | 53d → none |  |
| 26 | Tool bar modif grille | 2003-05-29 A | 2003-06-04 → 2003-06-02 A (-2d) | 5d? → 3d? | 0% → 100% | 55d → none |  |
| 27 | Actions Toolbar | 2003-06-05 → 2003-06-03 A (-2d) | 2003-06-11 → 2003-06-10 A (-1d) | 5d? → 6d? | 0% → 100% | 56d → none |  |
| 28 | Fin Livrable 2 | 2003-06-16 → 2003-06-27 (+11d) | 2003-06-16 → 2003-06-27 (+11d) |  |  | 54d → 55d | 25, 23, 27 → 25, 23, 27, 20 |
| 29 | **Livrable 3 Changements en mémoire** | 2003-06-17 → 2003-06-30 (+13d) | 2003-08-05 → 2003-08-21 (+16d) | 36d? → 39d? |  | 45d → 43d |  |
| 30 | **SetOfEvents** | 2003-06-17 → 2003-07-07 (+20d) | 2003-06-20 → 2003-07-10 (+20d) |  |  | 77d → 73d |  |
| 31 | Construction | 2003-06-17 → 2003-07-07 (+20d) | 2003-06-19 → 2003-07-08 (+19d) |  |  | 77d → 74d |  |
| 32 | Test | 2003-06-20 → 2003-07-10 (+20d) | 2003-06-20 → 2003-07-10 (+20d) |  |  | 77d → 73d |  |
| 33 | **Matrice conflits étudiants** | 2003-06-23 → 2003-07-14 (+21d) | 2003-06-27 → 2003-07-17 (+20d) | 5d? → 4d? |  | 72d → 68d |  |
| 34 | Construction | 2003-06-23 → 2003-07-14 (+21d) | 2003-06-26 → 2003-07-15 (+19d) |  |  | 72d → 69d |  |
| 35 | Test | 2003-06-27 → 2003-07-17 (+20d) | 2003-06-27 → 2003-07-17 (+20d) |  |  | 72d → 68d |  |
| 36 | **Conflits étudiants** | 2003-06-30 → 2003-07-18 (+18d) | 2003-07-01 → 2003-07-21 (+20d) |  |  | 70d → 66d |  |
| 37 | Construction | 2003-06-30 → 2003-07-18 (+18d) | 2003-06-30 → 2003-07-18 (+18d) |  |  | 70d → 66d |  |
| 38 | Test | 2003-07-01 → 2003-07-21 (+20d) | 2003-07-01 → 2003-07-21 (+20d) |  |  | 70d → 66d |  |
| 39 | **Conflits locaux** | 2003-07-03 → 2003-07-21 (+18d) | 2003-07-04 → 2003-07-22 (+18d) |  |  | 67d → 65d |  |
| 40 | Construction | 2003-07-03 → 2003-07-21 (+18d) | 2003-07-03 → 2003-07-21 (+18d) |  |  | 67d → 65d |  |
| 41 | Test | 2003-07-04 → 2003-07-22 (+18d) | 2003-07-04 → 2003-07-22 (+18d) |  |  | 67d → 65d |  |
| 42 | **Conflits enseignants** | 2003-07-07 → 2003-07-25 (+18d) | 2003-07-08 → 2003-07-28 (+20d) |  |  | 65d → 61d |  |
| 43 | Construction | 2003-07-07 → 2003-07-25 (+18d) | 2003-07-07 → 2003-07-25 (+18d) |  |  | 65d → 61d |  |
| 44 | Test | 2003-07-08 → 2003-07-28 (+20d) | 2003-07-08 → 2003-07-28 (+20d) |  |  | 65d → 61d |  |
| 45 | **Affectation événement** | 2003-07-10 → 2003-07-28 (+18d) | 2003-07-11 → 2003-07-29 (+18d) |  |  | 62d → 60d |  |
| 46 | Construction | 2003-07-10 → 2003-07-28 (+18d) | 2003-07-10 → 2003-07-28 (+18d) |  |  | 62d → 60d |  |
| 47 | Test | 2003-07-11 → 2003-07-29 (+18d) | 2003-07-11 → 2003-07-29 (+18d) |  |  | 62d → 60d |  |
| 48 | **Matrice de groupes** | 2003-07-14 → 2003-08-01 (+18d) | 2003-07-15 → 2003-08-04 (+20d) |  |  | 60d → 56d |  |
| 49 | Construction | 2003-07-14 → 2003-08-01 (+18d) | 2003-07-14 → 2003-08-01 (+18d) |  |  | 60d → 56d |  |
| 50 | Test | 2003-07-15 → 2003-08-04 (+20d) | 2003-07-15 → 2003-08-04 (+20d) |  |  | 60d → 56d |  |
| 51 | **Conflits étudiants** | 2003-07-17 → 2003-08-04 (+18d) | 2003-07-18 → 2003-08-05 (+18d) |  |  | 57d → 55d |  |
| 52 | Construction | 2003-07-17 → 2003-08-04 (+18d) | 2003-07-17 → 2003-08-04 (+18d) |  |  | 57d → 55d |  |
| 53 | Test | 2003-07-18 → 2003-08-05 (+18d) | 2003-07-18 → 2003-08-05 (+18d) |  |  | 57d → 55d |  |
| 54 | **Balancement de groupes** | 2003-07-21 → 2003-08-08 (+18d) | 2003-07-22 → 2003-08-11 (+20d) |  |  | 55d → 51d |  |
| 55 | Construction | 2003-07-21 → 2003-08-08 (+18d) | 2003-07-21 → 2003-08-08 (+18d) |  |  | 55d → 51d |  |
| 56 | Test | 2003-07-22 → 2003-08-11 (+20d) | 2003-07-22 → 2003-08-11 (+20d) |  |  | 55d → 51d |  |
| 57 | **Affectation initiale** | 2003-07-24 → 2003-08-11 (+18d) | 2003-07-25 → 2003-08-12 (+18d) |  |  | 52d → 50d |  |
| 58 | Construction | 2003-07-24 → 2003-08-11 (+18d) | 2003-07-24 → 2003-08-11 (+18d) |  |  | 52d → 50d |  |
| 59 | Test | 2003-07-25 → 2003-08-12 (+18d) | 2003-07-25 → 2003-08-12 (+18d) |  |  | 52d → 50d |  |
| 60 | **Amélioration manuelle** | 2003-07-28 → 2003-08-15 (+18d) | 2003-07-29 → 2003-08-18 (+20d) |  |  | 50d → 46d |  |
| 61 | Construction | 2003-07-28 → 2003-08-15 (+18d) | 2003-07-28 → 2003-08-15 (+18d) |  |  | 50d → 46d |  |
| 62 | Test | 2003-07-29 → 2003-08-18 (+20d) | 2003-07-29 → 2003-08-18 (+20d) |  |  | 50d → 46d |  |
| 63 | Menu activités | 2003-07-28 → 2003-08-14 (+17d) | 2003-07-29 → 2003-08-15 (+17d) |  |  | 50d → 47d |  |
| 64 | **Actions Activités** | 2003-06-17 → 2003-06-30 (+13d) | 2003-06-23 → 2003-07-08 (+15d) | 5d → 7d |  | 76d → 75d |  |
| 65 | Codage | 2003-06-17 → 2003-06-30 (+13d) | 2003-06-19 → 2003-07-01 (+12d) |  |  | 78d → 80d |  |
| 66 | Test | 2003-06-20 → 2003-07-07 (+17d) | 2003-06-23 → 2003-07-08 (+15d) |  |  | 76d → 75d |  |
| 67 | Menu blocs | 2003-06-26 → 2003-07-11 (+15d) | 2003-06-27 → 2003-07-14 (+17d) |  |  | 70d → 69d |  |
| 68 | **Actions blocs** | 2003-06-30 → 2003-07-15 (+15d) | 2003-07-04 → 2003-07-22 (+18d) | 5d → 6d |  | 67d → 65d |  |
| 69 | Codage | 2003-06-30 → 2003-07-15 (+15d) | 2003-07-01 → 2003-07-17 (+16d) |  |  | 70d → 68d |  |
| 70 | Test | 2003-07-03 → 2003-07-21 (+18d) | 2003-07-04 → 2003-07-22 (+18d) |  |  | 67d → 65d |  |
| 71 | Menu enseignants | 2003-07-07 → 2003-07-21 (+14d) | 2003-07-08 → 2003-07-22 (+14d) |  |  |  |  |
| 72 | **Actions enseignants** | 2003-07-10 → 2003-07-24 (+14d) | 2003-07-15 → 2003-07-29 (+14d) |  |  |  |  |
| 73 | Codage | 2003-07-10 → 2003-07-24 (+14d) | 2003-07-11 → 2003-07-25 (+14d) |  |  |  |  |
| 74 | Test | 2003-07-14 → 2003-07-28 (+14d) | 2003-07-15 → 2003-07-29 (+14d) |  |  |  |  |
| 75 | Menu groupe | 2003-07-17 → 2003-08-01 (+15d) | 2003-07-18 → 2003-08-04 (+17d) |  |  | 52d → 51d |  |
| 76 | **Actions groupes** | 2003-07-21 → 2003-08-05 (+15d) | 2003-07-25 → 2003-08-12 (+18d) | 5d → 6d |  | 50d → 48d |  |
| 77 | Codage | 2003-07-21 → 2003-08-05 (+15d) | 2003-07-22 → 2003-08-07 (+16d) |  |  | 53d → 51d |  |
| 78 | Test | 2003-07-24 → 2003-08-11 (+18d) | 2003-07-25 → 2003-08-12 (+18d) |  |  | 50d → 48d |  |
| 79 | **Grille horaire Adaptée** | 2003-07-31 → 2003-08-15 (+15d) | 2003-08-05 → 2003-08-21 (+16d) | 4d → 5d |  | 22d → 21d |  |
| 80 | Codage | 2003-07-31 → 2003-08-15 (+15d) | 2003-08-01 → 2003-08-18 (+17d) |  |  | 22d → 21d |  |
| 81 | Test | 2003-08-04 → 2003-08-19 (+15d) | 2003-08-05 → 2003-08-21 (+16d) |  |  | 23d → 21d |  |
| 82 | Fin Livrable 3 | 2003-08-05 → 2003-08-21 (+16d) | 2003-08-05 → 2003-08-21 (+16d) |  |  | 23d → 21d |  |
| 83 | **Livrable 4 Construction Horaire** | 2003-08-07 → 2003-08-22 (+15d) | 2003-09-05 → 2003-09-22 (+17d) |  |  | 22d → 21d |  |
| 84 | **Affectation initiale 2** | 2003-08-07 → 2003-08-22 (+15d) | 2003-08-15 → 2003-09-01 (+17d) |  |  | 35d → 34d |  |
| 85 | Codage actions Affectation | 2003-08-07 → 2003-08-22 (+15d) | 2003-08-08 → 2003-08-25 (+17d) |  |  | 42d → 41d |  |
| 86 | Test | 2003-08-11 → 2003-08-25 (+14d) | 2003-08-12 → 2003-08-26 (+14d) |  |  |  |  |
| 87 | Calcul de conflits | 2003-08-14 → 2003-08-29 (+15d) | 2003-08-15 → 2003-09-01 (+17d) |  |  | 30d → 29d |  |
| 88 | **Conflits enseignants** | 2003-08-18 → 2003-09-02 (+15d) | 2003-08-22 → 2003-09-08 (+17d) |  |  | 30d → 29d |  |
| 89 | Actions associées conflits enseigents | 2003-08-18 → 2003-09-02 (+15d) | 2003-08-19 → 2003-09-04 (+16d) |  |  | 30d → 28d |  |
| 90 | Test | 2003-08-21 → 2003-09-05 (+15d) | 2003-08-22 → 2003-09-08 (+17d) |  |  | 30d → 29d |  |
| 91 | **Conflits étudiants** | 2003-08-25 → 2003-09-08 (+14d) | 2003-08-29 → 2003-09-15 (+17d) | 5d? → 6d? |  | 27d → 26d |  |

| ID | Task | Start | Finish | Duration | Total float |
| --- | --- | --- | --- | --- | --- |
| 92 | Actions associées conflits étudiants | 2003-08-25 → 2003-09-08 (+14d) | 2003-08-26 → 2003-09-09 (+14d) |  |  |
| 93 | Test | 2003-08-28 → 2003-09-12 (+15d) | 2003-08-29 → 2003-09-15 (+17d) |  | 27d → 26d |
| 94 | **Conflits locaux** | 2003-09-01 → 2003-09-15 (+14d) | 2003-09-05 → 2003-09-22 (+17d) | 5d? → 6d? | 22d → 21d |
| 95 | Actions associées conflits locaux | 2003-09-01 → 2003-09-15 (+14d) | 2003-09-02 → 2003-09-16 (+14d) |  |  |
| 96 | Test | 2003-09-04 → 2003-09-19 (+15d) | 2003-09-05 → 2003-09-22 (+17d) |  | 22d → 21d |
| 97 | **Actions associées conflits et interface** | 2003-08-25 → 2003-09-09 (+15d) | 2003-08-29 → 2003-09-16 (+18d) | 5d? → 6d? | 27d → 25d |
| 98 | Codage | 2003-08-25 → 2003-09-09 (+15d) | 2003-08-26 → 2003-09-11 (+16d) |  | 30d → 28d |
| 99 | Test | 2003-08-28 → 2003-09-15 (+18d) | 2003-08-29 → 2003-09-16 (+18d) |  | 27d → 25d |
| 100 | Dialoges amélioration manuelle | 2003-08-07 → 2003-08-22 (+15d) | 2003-08-08 → 2003-08-25 (+17d) |  | 42d → 41d |
| 101 | **Actions amélioration manuelle** | 2003-08-11 → 2003-08-25 (+14d) | 2003-08-15 → 2003-09-01 (+17d) | 5d? → 6d? | 37d → 36d |
| 102 | Codage | 2003-08-11 → 2003-08-25 (+14d) | 2003-08-12 → 2003-08-26 (+14d) |  |  |
| 103 | Test | 2003-08-14 → 2003-08-29 (+15d) | 2003-08-15 → 2003-09-01 (+17d) |  | 37d → 36d |
| 104 | Exporter données | 2003-08-18 → 2003-09-01 (+14d) | 2003-08-19 → 2003-09-02 (+14d) |  |  |
| 105 | **Actions exporter données** | 2003-08-21 → 2003-09-05 (+15d) | 2003-09-02 → 2003-09-16 (+14d) | 9d? → 8d? | 12d → 11d |
| 106 | Codage | 2003-08-21 → 2003-09-05 (+15d) | 2003-08-22 → 2003-09-08 (+17d) |  | 32d → 31d |
| 107 | Test | 2003-09-01 → 2003-09-15 (+14d) | 2003-09-02 → 2003-09-16 (+14d) |  |  |
| 108 | Fin Livrable 4 | 2003-09-02 → 2003-09-16 (+14d) | 2003-09-02 → 2003-09-16 (+14d) |  |  |
| 109 | **Livrable 5 Optimisation + Rapports** | 2003-09-04 → 2003-09-18 (+14d) | 2003-09-26 → 2003-10-10 (+14d) |  |  |
| 110 | Optimisation | 2003-09-08 → 2003-09-22 (+14d) | 2003-09-09 → 2003-09-23 (+14d) |  | 15d → 16d |
| 111 | Codage | 2003-09-11 → 2003-09-25 (+14d) | 2003-09-12 → 2003-09-26 (+14d) |  |  |
| 112 | Test | 2003-09-15 → 2003-09-29 (+14d) | 2003-09-16 → 2003-09-30 (+14d) |  |  |
| 113 | Dialog de rapports | 2003-09-04 → 2003-09-18 (+14d) | 2003-09-05 → 2003-09-19 (+14d) |  |  |
| 114 | Rapport complet | 2003-09-08 → 2003-09-22 (+14d) | 2003-09-09 → 2003-09-23 (+14d) |  |  |
| 115 | Rapport conflits | 2003-09-11 → 2003-09-25 (+14d) | 2003-09-12 → 2003-09-26 (+14d) |  |  |
| 116 | Rapport importation | 2003-09-15 → 2003-09-29 (+14d) | 2003-09-16 → 2003-09-30 (+14d) |  |  |
| 117 | Rapport liste d'activités | 2003-09-18 → 2003-10-02 (+14d) | 2003-09-19 → 2003-10-03 (+14d) |  |  |
| 118 | Rapport groupes | 2003-09-22 → 2003-10-06 (+14d) | 2003-09-23 → 2003-10-07 (+14d) |  |  |
| 119 | Rapport complet & ranger | 2003-09-25 → 2003-10-09 (+14d) | 2003-09-26 → 2003-10-10 (+14d) |  |  |
| 120 | Fin Livrable 5 | 2003-09-26 → 2003-10-10 (+14d) | 2003-09-26 → 2003-10-10 (+14d) |  |  |
| 121 | **Livrable 6 Maintenance** | 2003-09-29 → 2003-10-13 (+14d) | 2003-10-07 → 2003-10-21 (+14d) |  |  |
| 122 | Compéter les menus | 2003-09-29 → 2003-10-13 (+14d) | 2003-09-30 → 2003-10-14 (+14d) |  |  |
| 123 | Compléter lesrapports | 2003-10-02 → 2003-10-17 (+15d) | 2003-10-03 → 2003-10-20 (+17d) |  | 2d → 1d |
| 124 | Ajout des fonctionnalitées | 2003-10-06 → 2003-10-20 (+14d) | 2003-10-07 → 2003-10-21 (+14d) |  |  |

## Version 9 (saved 2003-07-07)

Last finish stays 2003-10-21. Complete tasks 18 → 19.

Changed:

| ID | Task | Start | Finish | Complete | Total float |
| --- | --- | --- | --- | --- | --- |
| 7 | **Librable 2 Menu Fichier** |  |  | 79% → 88% |  |
| 20 | Test de TTStructure | 2003-06-19 A | 2003-06-27 A | 0% → 100% | 55d → none |

## Version 10 (saved 2003-07-15)

Last finish 2003-10-21 → 2003-11-20 (+30d). Complete tasks 19 → 25.

Changed:

| ID | Task | Start | Finish | Duration | Complete | Total float | Predecessors | Other |
| --- | --- | --- | --- | --- | --- | --- | --- | --- |
| 2 | **Livrable 1 Vérification de données** |  | 2003-05-22 A |  | 99% → 100% | 108d → none |  |  |
| 6 | Fin Livrable 1 | 2003-05-22 A | 2003-05-22 A |  | 0% → 100% | 108d → none |  |  |
| 7 | **Librable 2 Menu Fichier** |  | 2003-06-27 → 2003-07-14 A (+17d) | 26d? → 36d? | 88% → 100% | 82d → none |  |  |
| 10 | Grille Horaire TTPanel |  | 2003-05-30 → 2003-06-04 A (+5d) | 2d? → 5d | 60% → 100% | 102d → none | none → 9 |  |
| 11 | Menu Open |  |  |  |  |  | none → 10 |  |
| 20 | Test de TTStructure | 2003-06-19 A → 2003-06-26 A (+7d) | 2003-06-27 A → 2003-07-11 A (+14d) | 4d? → 8d |  |  |  |  |
| 22 | Modif Ddocument | 2003-05-26 A | 2003-05-26 → 2003-05-29 A (+3d) | 1d? → 4d | 0% → 100% | 106d → none |  | was named Modif DDocument |
| 23 | Actions Nouvelle grille | 2003-06-11 A → 2003-06-18 A (+7d) | 2003-06-17 A → 2003-06-30 A (+13d) |  |  |  |  |  |
| 24 | Menu Modifier grille horaire | 2003-06-06 A | 2003-06-09 → 2003-06-10 A (+1d) | 2d → 3d | 0% → 100% | 66d → none |  |  |
| 25 | Save grille horaire | 2003-06-10 → 2003-06-11 A (+1d) | 2003-06-11 → 2003-06-16 A (+5d) | 2d → 4d | 0% → 100% | 67d → none |  |  |
| 26 | Tool bar modif grille |  |  |  |  |  |  | constraint none → start no earlier than 2003-07-15 |
| 28 | Fin Livrable 2 | 2003-06-27 → 2003-07-14 A (+17d) | 2003-06-27 → 2003-07-14 A (+17d) |  | 0% → 100% | 55d → none |  | constraint none → start no earlier than 2003-07-11 |
| 29 | **Livrable 3 Horaire Manuel sans aide** | 2003-06-30 → 2003-07-14 (+14d) | 2003-08-21 → 2003-09-16 (+26d) | 39d? → 47d? |  | 43d → 47d |  | was named Livrable 3 Changements en mémoire |
| 30 | **SetOfEvents** | 2003-07-07 → 2003-07-14 (+7d) | 2003-07-10 → 2003-07-17 (+7d) |  |  | 73d → 90d |  |  |
| 31 | Construction | 2003-07-07 → 2003-07-14 (+7d) | 2003-07-08 → 2003-07-15 (+7d) |  |  | 74d → 90d |  |  |
| 32 | Test | 2003-07-10 → 2003-07-17 (+7d) | 2003-07-10 → 2003-07-17 (+7d) |  |  | 73d → 90d |  |  |
| 33 | **Matrice conflits étudiants** | 2003-07-14 → 2003-07-21 (+7d) | 2003-07-17 → 2003-07-24 (+7d) |  |  | 68d → 85d |  |  |
| 34 | Construction | 2003-07-14 → 2003-07-21 (+7d) | 2003-07-15 → 2003-07-22 (+7d) |  |  | 69d → 85d |  |  |
| 35 | Test | 2003-07-17 → 2003-07-24 (+7d) | 2003-07-17 → 2003-07-24 (+7d) |  |  | 68d → 85d |  |  |
| 36 | **Conflits étudiants** | 2003-07-18 → 2003-07-25 (+7d) | 2003-07-21 → 2003-08-11 (+21d) | 2d? → 12d? |  | 66d → 73d |  |  |
| 37 | Construction | 2003-07-18 → 2003-07-25 (+7d) | 2003-07-18 → 2003-07-25 (+7d) |  |  | 66d → 82d |  |  |
| 38 | Test | 2003-07-21 → 2003-08-11 (+21d) | 2003-07-21 → 2003-08-11 (+21d) |  |  | 66d → 73d |  |  |
| 39 | **Conflits locaux** | 2003-07-21 → 2003-08-11 (+21d) | 2003-07-22 → 2003-08-12 (+21d) |  |  | 65d → 71d |  |  |
| 40 | Construction | 2003-07-21 → 2003-08-11 (+21d) | 2003-07-21 → 2003-08-11 (+21d) |  |  | 65d → 71d |  |  |
| 41 | Test | 2003-07-22 → 2003-08-12 (+21d) | 2003-07-22 → 2003-08-12 (+21d) |  |  | 65d → 72d |  |  |
| 42 | **Conflits enseignants** | 2003-07-25 → 2003-08-15 (+21d) | 2003-07-28 → 2003-08-18 (+21d) |  |  | 61d → 67d |  |  |
| 43 | Construction | 2003-07-25 → 2003-08-15 (+21d) | 2003-07-25 → 2003-08-15 (+21d) |  |  | 61d → 67d |  |  |
| 44 | Test | 2003-07-28 → 2003-08-18 (+21d) | 2003-07-28 → 2003-08-18 (+21d) |  |  | 61d → 68d |  |  |
| 45 | **Affectation événement** | 2003-07-28 → 2003-08-18 (+21d) | 2003-07-29 → 2003-08-19 (+21d) |  |  | 60d → 66d |  |  |
| 46 | Construction | 2003-07-28 → 2003-08-18 (+21d) | 2003-07-28 → 2003-08-18 (+21d) |  |  | 60d → 66d |  |  |
| 47 | Test | 2003-07-29 → 2003-08-19 (+21d) | 2003-07-29 → 2003-08-19 (+21d) |  |  | 60d → 67d |  |  |
| 48 | **Matrice de groupes** | 2003-08-01 → 2003-08-22 (+21d) | 2003-08-04 → 2003-08-25 (+21d) |  |  | 56d → 62d |  |  |
| 49 | Construction | 2003-08-01 → 2003-08-22 (+21d) | 2003-08-01 → 2003-08-22 (+21d) |  |  | 56d → 62d |  |  |
| 50 | Test | 2003-08-04 → 2003-08-25 (+21d) | 2003-08-04 → 2003-08-25 (+21d) |  |  | 56d → 63d |  |  |
| 51 | **Conflits étudiants** | 2003-08-04 → 2003-08-25 (+21d) | 2003-08-05 → 2003-08-26 (+21d) |  |  | 55d → 61d |  |  |
| 52 | Construction | 2003-08-04 → 2003-08-25 (+21d) | 2003-08-04 → 2003-08-25 (+21d) |  |  | 55d → 61d |  |  |
| 53 | Test | 2003-08-05 → 2003-08-26 (+21d) | 2003-08-05 → 2003-08-26 (+21d) |  |  | 55d → 62d |  |  |
| 54 | **Balancement de groupes** | 2003-08-08 → 2003-08-29 (+21d) | 2003-08-11 → 2003-09-02 (+22d) | 2d? → 3d? |  | 51d → 57d |  |  |
| 55 | Construction | 2003-08-08 → 2003-08-29 (+21d) | 2003-08-08 → 2003-08-29 (+21d) |  |  | 51d → 57d |  |  |
| 56 | Test | 2003-08-11 → 2003-09-02 (+22d) | 2003-08-11 → 2003-09-02 (+22d) |  |  | 51d → 57d |  |  |
| 57 | **Affectation initiale** | 2003-08-11 → 2003-09-02 (+22d) | 2003-08-12 → 2003-09-04 (+23d) | 2d? → 3d? |  | 50d → 55d |  |  |
| 58 | Construction | 2003-08-11 → 2003-09-02 (+22d) | 2003-08-11 → 2003-09-02 (+22d) |  |  | 50d → 55d |  |  |
| 59 | Test | 2003-08-12 → 2003-09-04 (+23d) | 2003-08-12 → 2003-09-04 (+23d) |  |  | 50d → 55d |  |  |
| 60 | **Amélioration manuelle** | 2003-08-15 → 2003-09-08 (+24d) | 2003-08-18 → 2003-09-09 (+22d) |  |  | 46d → 51d |  |  |
| 61 | Construction | 2003-08-15 → 2003-09-08 (+24d) | 2003-08-15 → 2003-09-08 (+24d) |  |  | 46d → 51d |  |  |
| 62 | Test | 2003-08-18 → 2003-09-09 (+22d) | 2003-08-18 → 2003-09-09 (+22d) |  |  | 46d → 52d |  |  |
| 63 | Menu activités | 2003-08-14 → 2003-09-05 (+22d) | 2003-08-15 → 2003-09-08 (+24d) |  |  | 47d → 52d |  |  |
| 64 | **Actions Activités** | 2003-06-30 → 2003-07-14 (+14d) | 2003-07-08 → 2003-07-21 (+13d) | 7d → 6d |  | 75d → 88d |  |  |
| 65 | Codage | 2003-06-30 → 2003-07-14 (+14d) | 2003-07-01 → 2003-07-15 (+14d) |  |  | 80d → 91d |  |  |
| 66 | Test | 2003-07-07 → 2003-07-18 (+11d) | 2003-07-08 → 2003-07-21 (+13d) |  |  | 75d → 87d |  |  |
| 67 | Menu blocs | 2003-07-11 → 2003-07-21 (+10d) | 2003-07-14 → 2003-07-22 (+8d) |  |  | 69d → 84d |  |  |
| 68 | **Actions blocs** | 2003-07-15 → 2003-07-24 (+9d) | 2003-07-22 → 2003-08-12 (+21d) | 6d → 14d |  | 65d → 72d |  |  |
| 69 | Codage | 2003-07-15 → 2003-07-24 (+9d) | 2003-07-17 → 2003-07-25 (+8d) |  |  | 68d → 83d |  |  |
| 70 | Test | 2003-07-21 → 2003-08-11 (+21d) | 2003-07-22 → 2003-08-12 (+21d) |  |  | 65d → 71d |  |  |
| 71 | Menu enseignants | 2003-07-21 → 2003-08-15 (+25d) | 2003-07-22 → 2003-08-18 (+27d) |  |  | 63d → 65d |  |  |
| 72 | **Actions enseignants** | 2003-07-24 → 2003-08-19 (+26d) | 2003-07-29 → 2003-08-26 (+28d) | 4d → 6d |  | 60d → 62d |  |  |
| 73 | Codage | 2003-07-24 → 2003-08-19 (+26d) | 2003-07-25 → 2003-08-21 (+27d) |  |  | 62d → 65d |  |  |
| 74 | Test | 2003-07-28 → 2003-08-25 (+28d) | 2003-07-29 → 2003-08-26 (+28d) |  |  | 60d → 61d |  |  |
| 75 | Menu groupe | 2003-08-01 → 2003-08-25 (+24d) | 2003-08-04 → 2003-08-26 (+22d) |  |  | 51d → 56d |  |  |
| 76 | **Actions groupes** | 2003-08-05 → 2003-08-28 (+23d) | 2003-08-12 → 2003-09-04 (+23d) |  |  | 48d → 52d |  |  |
| 77 | Codage | 2003-08-05 → 2003-08-28 (+23d) | 2003-08-07 → 2003-08-29 (+22d) |  |  | 51d → 56d |  |  |
| 78 | Test | 2003-08-11 → 2003-09-02 (+22d) | 2003-08-12 → 2003-09-04 (+23d) |  |  | 48d → 52d |  |  |
| 79 | **Grille horaire Adaptée** | 2003-08-15 → 2003-09-11 (+27d) | 2003-08-21 → 2003-09-16 (+26d) | 5d → 4d |  | 21d → 23d |  |  |
| 80 | Codage | 2003-08-15 → 2003-09-11 (+27d) | 2003-08-18 → 2003-09-12 (+25d) |  |  | 21d → 23d |  |  |
| 81 | Test | 2003-08-19 → 2003-09-15 (+27d) | 2003-08-21 → 2003-09-16 (+26d) |  |  | 21d → 24d |  |  |
| 82 | Fin Livrable 3 | 2003-08-21 → 2003-09-16 (+26d) | 2003-08-21 → 2003-09-16 (+26d) |  |  | 21d → 24d |  |  |
| 83 | **Livrable 4 Construction Horaire** | 2003-08-22 → 2003-09-18 (+27d) | 2003-09-22 → 2003-10-20 (+28d) | 22d? → 23d? |  | 21d → 23d |  |  |
| 84 | **Affectation initiale 2** | 2003-08-22 → 2003-09-18 (+27d) | 2003-09-01 → 2003-09-26 (+25d) |  |  | 34d → 36d |  |  |
| 85 | Codage actions Affectation | 2003-08-22 → 2003-09-18 (+27d) | 2003-08-25 → 2003-09-19 (+25d) |  |  | 41d → 43d |  |  |
| 86 | Test | 2003-08-25 → 2003-09-22 (+28d) | 2003-08-26 → 2003-09-23 (+28d) |  |  | 40d → 41d |  |  |

| ID | Task | Start | Finish | Duration | Total float |
| --- | --- | --- | --- | --- | --- |
| 87 | Calcul de conflits | 2003-08-29 → 2003-09-25 (+27d) | 2003-09-01 → 2003-09-26 (+25d) |  | 29d → 31d |
| 88 | **Conflits enseignants** | 2003-09-02 → 2003-09-29 (+27d) | 2003-09-08 → 2003-10-03 (+25d) |  | 29d → 31d |
| 89 | Actions associées conflits enseigents | 2003-09-02 → 2003-09-29 (+27d) | 2003-09-04 → 2003-09-30 (+26d) |  | 28d → 31d |
| 90 | Test | 2003-09-05 → 2003-10-02 (+27d) | 2003-09-08 → 2003-10-03 (+25d) |  | 29d → 31d |
| 91 | **Conflits étudiants** | 2003-09-08 → 2003-10-06 (+28d) | 2003-09-15 → 2003-10-10 (+25d) | 6d? → 5d? | 26d → 29d |
| 92 | Actions associées conflits étudiants | 2003-09-08 → 2003-10-06 (+28d) | 2003-09-09 → 2003-10-07 (+28d) |  | 30d → 31d |
| 93 | Test | 2003-09-12 → 2003-10-09 (+27d) | 2003-09-15 → 2003-10-10 (+25d) |  | 26d → 28d |
| 94 | **Conflits locaux** | 2003-09-15 → 2003-10-14 (+29d) | 2003-09-22 → 2003-10-20 (+28d) | 6d? → 5d? | 21d → 23d |
| 95 | Actions associées conflits locaux | 2003-09-15 → 2003-10-14 (+29d) | 2003-09-16 → 2003-10-16 (+30d) |  |  |
| 96 | Test | 2003-09-19 → 2003-10-17 (+28d) | 2003-09-22 → 2003-10-20 (+28d) |  | 21d → 22d |
| 97 | **Actions associées conflits et interface** | 2003-09-09 → 2003-10-06 (+27d) | 2003-09-16 → 2003-10-14 (+28d) | 6d? → 7d? | 25d → 27d |
| 98 | Codage | 2003-09-09 → 2003-10-06 (+27d) | 2003-09-11 → 2003-10-07 (+26d) |  | 28d → 31d |
| 99 | Test | 2003-09-15 → 2003-10-10 (+25d) | 2003-09-16 → 2003-10-14 (+28d) |  | 25d → 27d |
| 100 | Dialoges amélioration manuelle | 2003-08-22 → 2003-09-18 (+27d) | 2003-08-25 → 2003-09-19 (+25d) |  | 41d → 43d |
| 101 | **Actions amélioration manuelle** | 2003-08-25 → 2003-09-22 (+28d) | 2003-09-01 → 2003-09-26 (+25d) | 6d? → 5d? | 36d → 39d |
| 102 | Codage | 2003-08-25 → 2003-09-22 (+28d) | 2003-08-26 → 2003-09-23 (+28d) |  | 40d → 41d |
| 103 | Test | 2003-08-29 → 2003-09-25 (+27d) | 2003-09-01 → 2003-09-26 (+25d) |  | 36d → 38d |
| 104 | Exporter données | 2003-09-01 → 2003-09-29 (+28d) | 2003-09-02 → 2003-09-30 (+28d) |  | 35d → 36d |
| 105 | **Actions exporter données** | 2003-09-05 → 2003-10-02 (+27d) | 2003-09-16 → 2003-10-16 (+30d) | 8d? → 11d? | 11d → 13d |
| 106 | Codage | 2003-09-05 → 2003-10-02 (+27d) | 2003-09-08 → 2003-10-03 (+25d) |  | 31d → 33d |
| 107 | Test | 2003-09-15 → 2003-10-14 (+29d) | 2003-09-16 → 2003-10-16 (+30d) |  |  |
| 108 | Fin Livrable 4 | 2003-09-16 → 2003-10-16 (+30d) | 2003-09-16 → 2003-10-16 (+30d) |  | 6d → 5d |
| 109 | **Livrable 5 Optimisation + Rapports** | 2003-09-18 → 2003-10-17 (+29d) | 2003-10-10 → 2003-11-10 (+31d) |  |  |
| 110 | Optimisation | 2003-09-22 → 2003-10-20 (+28d) | 2003-09-23 → 2003-10-21 (+28d) |  | 16d → 18d |
| 111 | Codage | 2003-09-25 → 2003-10-23 (+28d) | 2003-09-26 → 2003-10-24 (+28d) |  | 17d → 18d |
| 112 | Test | 2003-09-29 → 2003-10-27 (+28d) | 2003-09-30 → 2003-10-28 (+28d) |  | 15d → 16d |
| 113 | Dialog de rapports | 2003-09-18 → 2003-10-17 (+29d) | 2003-09-19 → 2003-10-20 (+31d) |  |  |
| 114 | Rapport complet | 2003-09-22 → 2003-10-21 (+29d) | 2003-09-23 → 2003-10-23 (+30d) |  |  |
| 115 | Rapport conflits | 2003-09-25 → 2003-10-24 (+29d) | 2003-09-26 → 2003-10-27 (+31d) |  |  |
| 116 | Rapport importation | 2003-09-29 → 2003-10-28 (+29d) | 2003-09-30 → 2003-10-30 (+30d) |  |  |
| 117 | Rapport liste d'activités | 2003-10-02 → 2003-10-31 (+29d) | 2003-10-03 → 2003-11-03 (+31d) |  |  |
| 118 | Rapport groupes | 2003-10-06 → 2003-11-04 (+29d) | 2003-10-07 → 2003-11-06 (+30d) |  |  |
| 119 | Rapport complet & ranger | 2003-10-09 → 2003-11-07 (+29d) | 2003-10-10 → 2003-11-10 (+31d) |  |  |
| 120 | Fin Livrable 5 | 2003-10-10 → 2003-11-10 (+31d) | 2003-10-10 → 2003-11-10 (+31d) |  |  |
| 121 | **Livrable 6 Maintenance** | 2003-10-13 → 2003-11-11 (+29d) | 2003-10-21 → 2003-11-20 (+30d) | 7d? → 8d? |  |
| 122 | Compéter les menus | 2003-10-13 → 2003-11-11 (+29d) | 2003-10-14 → 2003-11-13 (+30d) |  |  |
| 123 | Compléter lesrapports | 2003-10-17 → 2003-11-17 (+31d) | 2003-10-20 → 2003-11-18 (+29d) |  |  |
| 124 | Ajout des fonctionnalitées | 2003-10-20 → 2003-11-18 (+29d) | 2003-10-21 → 2003-11-20 (+30d) |  |  |

## Version 11 (saved 2003-07-16)

Last finish 2003-11-20 → 2003-12-09 (+19d). Complete tasks 25 → 26.

Added:

| ID | Task | Duration | Start | Finish | Predecessors | Resources |
| --- | --- | --- | --- | --- | --- | --- |
| 30 | Révision de spécs, Planif | 2d | 2003-07-14 A | 2003-07-15 A |  | Alex; Ruben; Yannick |
| 31 | **Menu Activites** | 6d? | 2003-07-17 | 2003-07-24 | 30 |  |
| 32 | Dialogue | 3d? | 2003-07-17 | 2003-07-21 |  | Alex; Yannick |
| 33 | Actions | 2d? | 2003-07-22 | 2003-07-24 | 32 | Alex; Yannick |
| 34 | **Adaptation disponibilite-grille** | 12d? | 2003-07-25 | 2003-08-11 | 31 |  |
| 67 | **Exportation** | 2d? | 2003-09-25 | 2003-09-26 | 64 |  |
| 70 | **Enseignants** | 6d? | 2003-08-12 | 2003-08-19 | 34 | Alex |
| 71 | Menu | 1d? | 2003-08-12 | 2003-08-12 |  | Alex |
| 75 | **Locaux** | 6d? | 2003-08-21 | 2003-08-28 | 70 | Alex |
| 76 | Menu | 1d? | 2003-08-21 | 2003-08-21 |  | Alex |
| 77 | **Actions locaux** | 5d | 2003-08-22 | 2003-08-28 | 76 |  |
| 78 | Codage | 2d | 2003-08-22 | 2003-08-25 |  | Alex |
| 79 | Test | 2d | 2003-08-26 | 2003-08-28 |  | Alex |
| 80 | **Événements** | 7d? | 2003-08-29 | 2003-09-08 | 75 | Alex |
| 81 | Menu | 1d? | 2003-08-29 | 2003-08-29 |  |  |
| 85 | **Groupe** | 8d? | 2003-09-09 | 2003-09-18 | 80 |  |
| 90 | **Affectation manuelle** | 7d | 2003-09-19 | 2003-09-29 | 85 |  |
| 91 | Menu | 2d | 2003-09-19 | 2003-09-22 |  | Alex |
| 92 | **Actions affectation manuelle** | 5d | 2003-09-23 | 2003-09-29 | 91 |  |
| 93 | Codage | 2d | 2003-09-23 | 2003-09-25 |  | Alex |
| 94 | Test | 2d | 2003-09-26 | 2003-09-29 |  | Alex |
| 98 | Automate menu | 10d | 2003-07-17 | 2003-08-15 |  | Ruben |
| 99 | Status bar | 10d? | 2003-08-18 | 2003-09-04 | 98 | Ruben |

Removed: 51 Conflits étudiants; 63 Menu activités; 64 Actions Activités; 67 Menu blocs; 71 Menu enseignants

Changed:

| ID | Task | Start | Finish | Duration | Complete | Total float | Predecessors | Other |
| --- | --- | --- | --- | --- | --- | --- | --- | --- |
| 29 | **Livrable 3 Horaire Manuel sans aide** | 2003-07-14 A | 2003-09-16 → 2003-10-06 (+20d) | 47d? → 61d? | 0% → 2% | 47d → 46d |  |  |
| 35 | Codage | 2003-07-14 → 2003-07-25 (+11d) | 2003-07-15 → 2003-07-25 (+10d) | 2d → 1d? |  | 91d → 40d |  | resources Alex → Alex; Yannick; baseline start 2003-06-19 → none; baseline finish 2003-06-23 → none |
| 36 | Test | 2003-08-19 → 2003-08-11 (-8d) | 2003-08-19 → 2003-08-11 (-8d) |  |  | 67d → 30d | 44 → 35 | resources Yannick → Alex; Yannick |
| 37 | **SetOfEvents** | 2003-07-14 → 2003-08-12 (+29d) | 2003-07-17 → 2003-08-19 (+33d) | 4d? → 6d? |  | 90d → 30d | none → 34 |  |
| 38 | Construction | 2003-07-14 → 2003-08-12 (+29d) | 2003-07-15 → 2003-08-15 (+31d) | 2d? → 3d? |  | 90d → 30d |  |  |
| 39 | Test | 2003-07-17 → 2003-08-18 (+32d) | 2003-07-17 → 2003-08-19 (+33d) | 1d? → 2d? |  | 90d → 30d |  |  |
| 40 | **Matrice conflits étudiants** | 2003-07-21 → 2003-08-21 (+31d) | 2003-07-24 → 2003-08-25 (+32d) | 4d? → 3d? |  | 85d → 30d | none → 37 |  |
| 41 | Construction | 2003-07-21 → 2003-08-21 (+31d) | 2003-07-22 → 2003-08-22 (+31d) |  |  | 85d → 30d |  |  |
| 42 | Test | 2003-07-24 → 2003-08-25 (+32d) | 2003-07-24 → 2003-08-25 (+32d) |  |  | 85d → 30d |  |  |
| 43 | **Matrice de groupes** | 2003-08-22 → 2003-08-26 (+4d) | 2003-08-25 → 2003-08-28 (+3d) | 2d? → 3d? |  | 62d → 30d | none → 40 |  |
| 44 | Construction | 2003-08-18 → 2003-08-26 (+8d) | 2003-08-18 → 2003-08-26 (+8d) |  |  | 66d → 30d |  |  |
| 45 | Test | 2003-08-25 → 2003-08-28 (+3d) | 2003-08-25 → 2003-08-28 (+3d) |  |  | 63d → 30d | 47 → 44 |  |
| 46 | **Affectation événement** | 2003-08-18 → 2003-08-29 (+11d) | 2003-08-19 → 2003-09-02 (+14d) | 2d? → 3d? |  | 66d → 30d | none → 43 |  |
| 47 | Construction | 2003-08-22 → 2003-08-29 (+7d) | 2003-08-22 → 2003-08-29 (+7d) |  |  | 62d → 30d |  |  |
| 48 | Test | 2003-08-26 → 2003-09-02 (+7d) | 2003-08-26 → 2003-09-02 (+7d) |  |  | 62d → 30d | 68 → 47 |  |
| 49 | **Recherche Conflits étudiants** | 2003-07-25 → 2003-09-04 (+41d) | 2003-08-11 → 2003-09-05 (+25d) | 12d? → 2d? |  | 73d → 30d | none → 46 | was named Conflits étudiants |
| 50 | Construction | 2003-07-25 → 2003-09-04 (+41d) | 2003-07-25 → 2003-09-04 (+41d) |  |  | 82d → 30d |  |  |
| 51 | Test | 2003-08-11 → 2003-09-05 (+25d) | 2003-08-11 → 2003-09-05 (+25d) |  |  | 73d → 30d |  |  |
| 52 | **Recherche Conflits locaux** | 2003-08-11 → 2003-09-08 (+28d) | 2003-08-12 → 2003-09-09 (+28d) |  |  | 71d → 30d | none → 49 | was named Conflits locaux |
| 53 | Construction | 2003-08-11 → 2003-09-08 (+28d) | 2003-08-11 → 2003-09-08 (+28d) |  |  | 71d → 30d |  |  |
| 54 | Test | 2003-08-12 → 2003-09-09 (+28d) | 2003-08-12 → 2003-09-09 (+28d) |  |  | 72d → 30d |  |  |
| 55 | **Recherche Conflits enseignants** | 2003-08-15 → 2003-09-11 (+27d) | 2003-08-18 → 2003-09-12 (+25d) |  |  | 67d → 30d | none → 52 | was named Conflits enseignants |
| 56 | Construction | 2003-08-15 → 2003-09-11 (+27d) | 2003-08-15 → 2003-09-11 (+27d) |  |  | 67d → 30d |  |  |
| 57 | Test | 2003-08-18 → 2003-09-12 (+25d) | 2003-08-18 → 2003-09-12 (+25d) |  |  | 68d → 30d |  |  |
| 58 | **Balancement de groupes** | 2003-08-29 → 2003-09-15 (+17d) | 2003-09-02 → 2003-09-16 (+14d) | 3d? → 2d? |  | 57d → 30d | none → 55 |  |
| 59 | Construction | 2003-08-29 → 2003-09-15 (+17d) | 2003-08-29 → 2003-09-15 (+17d) |  |  | 57d → 30d |  |  |
| 60 | Test | 2003-09-02 → 2003-09-16 (+14d) | 2003-09-02 → 2003-09-16 (+14d) |  |  | 57d → 30d |  |  |
| 61 | **Affectation initiale** | 2003-09-02 → 2003-09-18 (+16d) | 2003-09-04 → 2003-09-19 (+15d) | 3d? → 2d? |  | 55d → 30d | none → 58 |  |
| 62 | Construction | 2003-09-02 → 2003-09-18 (+16d) | 2003-09-02 → 2003-09-18 (+16d) |  |  | 55d → 30d |  |  |
| 63 | Test | 2003-09-04 → 2003-09-19 (+15d) | 2003-09-04 → 2003-09-19 (+15d) |  |  | 55d → 30d |  |  |
| 64 | **Amélioration manuelle** | 2003-09-08 → 2003-09-22 (+14d) | 2003-09-09 → 2003-09-23 (+14d) |  |  | 51d → 30d | none → 61 |  |
| 65 | Construction | 2003-09-08 → 2003-09-22 (+14d) | 2003-09-08 → 2003-09-22 (+14d) |  |  | 51d → 30d |  |  |
| 66 | Test | 2003-09-09 → 2003-09-23 (+14d) | 2003-09-09 → 2003-09-23 (+14d) |  |  | 52d → 30d |  |  |
| 68 | Construction | 2003-08-25 → 2003-09-25 (+31d) | 2003-08-25 → 2003-09-25 (+31d) |  |  | 61d → 30d |  |  |
| 69 | Test | 2003-07-18 → 2003-09-26 (+70d) | 2003-07-21 → 2003-09-26 (+67d) | 2d → 1d? |  | 87d → 30d | none → 68 | resources Alex → Yannick; baseline start 2003-06-23 → none; baseline finish 2003-06-25 → none |
| 72 | **Actions enseignants** | 2003-08-19 → 2003-08-14 (-5d) | 2003-08-26 → 2003-08-19 (-7d) | 6d → 4d |  | 62d → 63d | Menu enseignants → 71 |  |
| 73 | Codage | 2003-08-19 → 2003-08-14 (-5d) | 2003-08-21 → 2003-08-15 (-6d) |  |  |  |  |  |
| 74 | Test | 2003-08-25 → 2003-08-18 (-7d) | 2003-08-26 → 2003-08-19 (-7d) |  |  | 61d → 63d |  |  |
| 82 | **Actions événements** | 2003-07-24 → 2003-09-02 (+40d) | 2003-08-12 → 2003-09-08 (+27d) | 14d → 5d |  | 72d → 56d | Menu blocs → 81 | was named Actions blocs |
| 83 | Codage | 2003-07-24 → 2003-09-02 (+40d) | 2003-07-25 → 2003-09-04 (+41d) |  |  | 83d → 58d |  |  |
| 84 | Test | 2003-08-11 → 2003-09-05 (+25d) | 2003-08-12 → 2003-09-08 (+27d) |  |  | 71d → 56d |  |  |
| 86 | Menu | 2003-08-25 → 2003-09-09 (+15d) | 2003-08-26 → 2003-09-11 (+16d) | 2d → 2d? |  |  |  | was named Menu groupe |
| 87 | **Actions groupes** | 2003-08-28 → 2003-09-12 (+15d) | 2003-09-04 → 2003-09-18 (+14d) | 6d → 5d? |  | 52d → 53d |  |  |
| 88 | Codage | 2003-08-28 → 2003-09-12 (+15d) | 2003-08-29 → 2003-09-15 (+17d) | 2d → 2d? |  |  |  |  |
| 89 | Test | 2003-09-02 → 2003-09-16 (+14d) | 2003-09-04 → 2003-09-18 (+14d) | 2d → 2d? |  | 52d → 53d |  |  |
| 95 | **Menu Optimisation** | 2003-09-11 → 2003-09-30 (+19d) | 2003-09-16 → 2003-10-06 (+20d) | 4d → 5d? |  | 23d → 24d |  | was named Grille horaire Adaptée |
| 96 | Codage | 2003-09-11 → 2003-09-30 (+19d) | 2003-09-12 → 2003-10-02 (+20d) | 2d → 2d? |  |  |  |  |
| 97 | Test | 2003-09-15 → 2003-10-03 (+18d) | 2003-09-16 → 2003-10-06 (+20d) | 2d → 2d? |  |  |  |  |
| 100 | Fin Livrable 3 | 2003-09-16 → 2003-10-06 (+20d) | 2003-09-16 → 2003-10-06 (+20d) |  |  |  | 97 → 67, 95, 99 |  |
| 101 | **Livrable 4 Construction Horaire** | 2003-09-18 → 2003-10-07 (+19d) | 2003-10-20 → 2003-11-07 (+18d) | 23d? → 24d? |  | 23d → 22d |  |  |
| 102 | **Affectation initiale 2** | 2003-09-18 → 2003-10-07 (+19d) | 2003-09-26 → 2003-10-17 (+21d) | 7d? → 9d? |  | 36d → 37d |  |  |
| 103 | Codage actions Affectation | 2003-09-18 → 2003-10-07 (+19d) | 2003-09-19 → 2003-10-09 (+20d) |  |  |  |  |  |
| 104 | Test | 2003-09-22 → 2003-10-10 (+18d) | 2003-09-23 → 2003-10-14 (+21d) |  |  | 41d → 40d |  |  |
| 105 | Calcul de conflits | 2003-09-25 → 2003-10-16 (+21d) | 2003-09-26 → 2003-10-17 (+21d) |  |  | 31d → 30d |  |  |
| 106 | **Conflits enseignants** | 2003-09-29 → 2003-10-20 (+21d) | 2003-10-03 → 2003-10-24 (+21d) |  |  | 31d → 30d |  |  |
| 107 | Actions associées conflits enseigents | 2003-09-29 → 2003-10-20 (+21d) | 2003-09-30 → 2003-10-21 (+21d) |  |  | 31d → 30d |  |  |
| 108 | Test | 2003-10-02 → 2003-10-23 (+21d) | 2003-10-03 → 2003-10-24 (+21d) |  |  | 31d → 30d |  |  |
| 109 | **Conflits étudiants** | 2003-10-06 → 2003-10-27 (+21d) | 2003-10-10 → 2003-10-31 (+21d) |  |  | 29d → 27d |  |  |
| 110 | Actions associées conflits étudiants | 2003-10-06 → 2003-10-27 (+21d) | 2003-10-07 → 2003-10-28 (+21d) |  |  | 31d → 30d |  |  |
| 111 | Test | 2003-10-09 → 2003-10-30 (+21d) | 2003-10-10 → 2003-10-31 (+21d) |  |  | 28d → 27d |  |  |
| 112 | **Conflits locaux** | 2003-10-14 → 2003-11-03 (+20d) | 2003-10-20 → 2003-11-07 (+18d) |  |  | 23d → 22d |  |  |
| 113 | Actions associées conflits locaux | 2003-10-14 → 2003-11-03 (+20d) | 2003-10-16 → 2003-11-04 (+19d) |  |  |  |  |  |
| 114 | Test | 2003-10-17 → 2003-11-06 (+20d) | 2003-10-20 → 2003-11-07 (+18d) |  |  |  |  |  |
| 115 | **Actions associées conflits et interface** | 2003-10-06 → 2003-10-27 (+21d) | 2003-10-14 → 2003-10-31 (+17d) | 7d? → 5d? |  |  |  |  |
| 116 | Codage | 2003-10-06 → 2003-10-27 (+21d) | 2003-10-07 → 2003-10-28 (+21d) |  |  | 31d → 30d |  |  |
| 117 | Test | 2003-10-10 → 2003-10-30 (+20d) | 2003-10-14 → 2003-10-31 (+17d) |  |  |  |  |  |
| 118 | Dialoges amélioration manuelle | 2003-09-18 → 2003-10-07 (+19d) | 2003-09-19 → 2003-10-09 (+20d) |  |  |  |  |  |
| 119 | **Actions amélioration manuelle** | 2003-09-22 → 2003-10-10 (+18d) | 2003-09-26 → 2003-10-17 (+21d) | 5d? → 6d? |  | 39d → 37d |  |  |
| 120 | Codage | 2003-09-22 → 2003-10-10 (+18d) | 2003-09-23 → 2003-10-14 (+21d) |  |  | 41d → 40d |  |  |
| 121 | Test | 2003-09-25 → 2003-10-16 (+21d) | 2003-09-26 → 2003-10-17 (+21d) |  |  | 38d → 37d |  |  |

| ID | Task | Start | Finish | Duration | Total float |
| --- | --- | --- | --- | --- | --- |
| 122 | Exporter données | 2003-09-29 → 2003-10-20 (+21d) | 2003-09-30 → 2003-10-21 (+21d) |  | 36d → 35d |
| 123 | **Actions exporter données** | 2003-10-02 → 2003-10-23 (+21d) | 2003-10-16 → 2003-11-04 (+19d) | 11d? → 9d? | 13d → 12d |
| 124 | Codage | 2003-10-02 → 2003-10-23 (+21d) | 2003-10-03 → 2003-10-24 (+21d) |  | 33d → 32d |
| 125 | Test | 2003-10-14 → 2003-11-03 (+20d) | 2003-10-16 → 2003-11-04 (+19d) |  |  |
| 126 | Fin Livrable 4 | 2003-10-16 → 2003-11-04 (+19d) | 2003-10-16 → 2003-11-04 (+19d) |  | 5d → 6d |
| 127 | **Livrable 5 Optimisation + Rapports** | 2003-10-17 → 2003-11-06 (+20d) | 2003-11-10 → 2003-11-28 (+18d) |  |  |
| 128 | Optimisation | 2003-10-20 → 2003-11-10 (+21d) | 2003-10-21 → 2003-11-11 (+21d) |  | 18d → 15d |
| 129 | Codage | 2003-10-23 → 2003-11-13 (+21d) | 2003-10-24 → 2003-11-14 (+21d) |  | 18d → 17d |
| 130 | Test | 2003-10-27 → 2003-11-17 (+21d) | 2003-10-28 → 2003-11-18 (+21d) |  | 16d → 15d |
| 131 | Dialog de rapports | 2003-10-17 → 2003-11-06 (+20d) | 2003-10-20 → 2003-11-07 (+18d) |  |  |
| 132 | Rapport complet | 2003-10-21 → 2003-11-10 (+20d) | 2003-10-23 → 2003-11-11 (+19d) |  |  |
| 133 | Rapport conflits | 2003-10-24 → 2003-11-13 (+20d) | 2003-10-27 → 2003-11-14 (+18d) |  |  |
| 134 | Rapport importation | 2003-10-28 → 2003-11-17 (+20d) | 2003-10-30 → 2003-11-18 (+19d) |  |  |
| 135 | Rapport liste d'activités | 2003-10-31 → 2003-11-20 (+20d) | 2003-11-03 → 2003-11-21 (+18d) |  |  |
| 136 | Rapport groupes | 2003-11-04 → 2003-11-24 (+20d) | 2003-11-06 → 2003-11-25 (+19d) |  |  |
| 137 | Rapport complet & ranger | 2003-11-07 → 2003-11-27 (+20d) | 2003-11-10 → 2003-11-28 (+18d) |  |  |
| 138 | Fin Livrable 5 | 2003-11-10 → 2003-11-28 (+18d) | 2003-11-10 → 2003-11-28 (+18d) |  |  |
| 139 | **Livrable 6 Maintenance** | 2003-11-11 → 2003-12-01 (+20d) | 2003-11-20 → 2003-12-09 (+19d) | 8d? → 7d? |  |
| 140 | Compéter les menus | 2003-11-11 → 2003-12-01 (+20d) | 2003-11-13 → 2003-12-02 (+19d) |  |  |
| 141 | Compléter lesrapports | 2003-11-17 → 2003-12-04 (+17d) | 2003-11-18 → 2003-12-05 (+17d) |  | 1d → 2d |
| 142 | Ajout des fonctionnalitées | 2003-11-18 → 2003-12-08 (+20d) | 2003-11-20 → 2003-12-09 (+19d) |  |  |

## Version 12 (saved 2003-08-01)

Last finish 2003-12-09 → 2003-12-05 (-4d). Complete tasks 26 → 33.

Changed:

| ID | Task | Start | Finish | Duration | Complete | Total float | Predecessors | Other |
| --- | --- | --- | --- | --- | --- | --- | --- | --- |
| 29 | **Livrable 3 Horaire Manuel sans aide** |  | 2003-10-06 → 2003-10-02 (-4d) | 61d? → 59d? | 2% → 14% |  |  |  |
| 31 | **Menu Activites** | 2003-07-17 A | 2003-07-24 A |  | 0% → 100% | 40d → none |  |  |
| 32 | Dialogue | 2003-07-17 A | 2003-07-21 A |  | 0% → 100% | 40d → none |  |  |
| 33 | Actions | 2003-07-22 A | 2003-07-24 A |  | 0% → 100% | 40d → none |  |  |
| 34 | **Adaptation disponibilite-grille** | 2003-07-25 A | 2003-08-11 A |  | 0% → 100% | 30d → none |  |  |
| 35 | Codage | 2003-07-25 A | 2003-07-25 A |  | 0% → 100% | 40d → none |  |  |
| 36 | Test | 2003-08-11 A | 2003-08-11 A |  | 0% → 100% | 30d → none |  |  |
| 37 | **SetOfEvents** | 2003-08-12 → 2003-08-18 (+6d) | 2003-08-19 → 2003-08-25 (+6d) |  |  | 30d → 24d | 34 → 70 |  |
| 38 | Construction | 2003-08-12 → 2003-08-18 (+6d) | 2003-08-15 → 2003-08-21 (+6d) |  |  | 30d → 23d |  |  |
| 39 | Test | 2003-08-18 → 2003-08-22 (+4d) | 2003-08-19 → 2003-08-25 (+6d) |  |  | 30d → 24d |  |  |
| 40 | **Matrice conflits étudiants** | 2003-08-21 → 2003-08-26 (+5d) | 2003-08-25 → 2003-08-29 (+4d) | 3d? → 4d? |  | 30d → 24d |  |  |
| 41 | Construction | 2003-08-21 → 2003-08-26 (+5d) | 2003-08-22 → 2003-08-28 (+6d) |  |  | 30d → 23d |  |  |
| 42 | Test | 2003-08-25 → 2003-08-29 (+4d) | 2003-08-25 → 2003-08-29 (+4d) |  |  | 30d → 24d |  |  |
| 43 | **Matrice de groupes** | 2003-08-26 → 2003-09-02 (+7d) | 2003-08-28 → 2003-09-04 (+7d) |  |  | 30d → 22d |  |  |
| 44 | Construction | 2003-08-26 → 2003-09-02 (+7d) | 2003-08-26 → 2003-09-02 (+7d) |  |  | 30d → 23d |  |  |
| 45 | Test | 2003-08-28 → 2003-09-04 (+7d) | 2003-08-28 → 2003-09-04 (+7d) |  |  | 30d → 22d |  |  |
| 46 | **Affectation événement** | 2003-08-29 → 2003-09-05 (+7d) | 2003-09-02 → 2003-09-08 (+6d) | 3d? → 2d? |  | 30d → 22d |  |  |
| 47 | Construction | 2003-08-29 → 2003-09-05 (+7d) | 2003-08-29 → 2003-09-05 (+7d) |  |  | 30d → 22d |  |  |
| 48 | Test | 2003-09-02 → 2003-09-08 (+6d) | 2003-09-02 → 2003-09-08 (+6d) |  |  | 30d → 23d |  |  |
| 49 | **Recherche Conflits étudiants** | 2003-09-04 → 2003-09-09 (+5d) | 2003-09-05 → 2003-09-11 (+6d) | 2d? → 3d? |  | 30d → 23d |  |  |
| 50 | Construction | 2003-09-04 → 2003-09-09 (+5d) | 2003-09-04 → 2003-09-09 (+5d) |  |  | 30d → 23d |  |  |
| 51 | Test | 2003-09-05 → 2003-09-11 (+6d) | 2003-09-05 → 2003-09-11 (+6d) |  |  | 30d → 23d |  |  |
| 52 | **Recherche Conflits locaux** | 2003-09-08 → 2003-09-12 (+4d) | 2003-09-09 → 2003-09-15 (+6d) |  |  | 30d → 24d |  |  |
| 53 | Construction | 2003-09-08 → 2003-09-12 (+4d) | 2003-09-08 → 2003-09-12 (+4d) |  |  | 30d → 24d |  |  |
| 54 | Test | 2003-09-09 → 2003-09-15 (+6d) | 2003-09-09 → 2003-09-15 (+6d) |  |  | 30d → 24d |  |  |
| 55 | **Recherche Conflits enseignants** | 2003-09-11 → 2003-09-16 (+5d) | 2003-09-12 → 2003-09-18 (+6d) | 2d? → 3d? |  | 30d → 23d |  |  |
| 56 | Construction | 2003-09-11 → 2003-09-16 (+5d) | 2003-09-11 → 2003-09-16 (+5d) |  |  | 30d → 24d |  |  |
| 57 | Test | 2003-09-12 → 2003-09-18 (+6d) | 2003-09-12 → 2003-09-18 (+6d) |  |  | 30d → 23d |  |  |
| 58 | **Balancement de groupes** | 2003-09-15 → 2003-09-19 (+4d) | 2003-09-16 → 2003-09-22 (+6d) |  |  | 30d → 24d |  |  |
| 59 | Construction | 2003-09-15 → 2003-09-19 (+4d) | 2003-09-15 → 2003-09-19 (+4d) |  |  | 30d → 24d |  |  |
| 60 | Test | 2003-09-16 → 2003-09-22 (+6d) | 2003-09-16 → 2003-09-22 (+6d) |  |  | 30d → 24d |  |  |
| 61 | **Affectation initiale** | 2003-09-18 → 2003-09-23 (+5d) | 2003-09-19 → 2003-09-25 (+6d) | 2d? → 3d? |  | 30d → 23d |  |  |
| 62 | Construction | 2003-09-18 → 2003-09-23 (+5d) | 2003-09-18 → 2003-09-23 (+5d) |  |  | 30d → 24d |  |  |
| 63 | Test | 2003-09-19 → 2003-09-25 (+6d) | 2003-09-19 → 2003-09-25 (+6d) |  |  | 30d → 23d |  |  |
| 64 | **Amélioration manuelle** | 2003-09-22 → 2003-09-26 (+4d) | 2003-09-23 → 2003-09-29 (+6d) |  |  | 30d → 24d |  |  |
| 65 | Construction | 2003-09-22 → 2003-09-26 (+4d) | 2003-09-22 → 2003-09-26 (+4d) |  |  | 30d → 24d |  |  |
| 66 | Test | 2003-09-23 → 2003-09-29 (+6d) | 2003-09-23 → 2003-09-29 (+6d) |  |  | 30d → 24d |  |  |
| 67 | **Exportation** | 2003-09-25 → 2003-09-30 (+5d) | 2003-09-26 → 2003-10-02 (+6d) | 2d? → 3d? |  | 30d → 23d |  |  |
| 68 | Construction | 2003-09-25 → 2003-09-30 (+5d) | 2003-09-25 → 2003-09-30 (+5d) |  |  | 30d → 24d |  |  |
| 69 | Test | 2003-09-26 → 2003-10-02 (+6d) | 2003-09-26 → 2003-10-02 (+6d) |  |  | 30d → 23d |  |  |
| 70 | **Enseignants** | 2003-08-12 A | 2003-08-19 → 2003-08-15 A (-4d) | 6d? → 4d | 0% → 100% | 63d → none |  | resources Alex → Alex; Yannick |
| 71 | Menu | 2003-08-12 A | 2003-08-12 A | 1d? → 1d | 0% → 100% | 65d → none |  | resources Alex → Alex; Yannick |
| 72 | **Actions enseignants** | 2003-08-14 A | 2003-08-19 → 2003-08-15 A (-4d) | 4d → 2d | 0% → 100% | 63d → none |  |  |
| 73 | Codage | 2003-08-14 A | 2003-08-15 → 2003-08-14 A (-1d) | 2d → 1d | 0% → 100% | 65d → none |  | resources Alex → Alex; Yannick |
| 74 | Test | 2003-08-18 → 2003-08-15 A (-3d) | 2003-08-19 → 2003-08-15 A (-4d) | 2d → 1d | 0% → 100% | 63d → none | none → 73 | resources Alex → Alex; Yannick |
| 75 | **Locaux** | 2003-08-21 → 2003-08-18 (-3d) | 2003-08-28 → 2003-08-25 (-3d) |  |  | 60d → 61d |  |  |
| 76 | Menu | 2003-08-21 → 2003-08-18 (-3d) | 2003-08-21 → 2003-08-18 (-3d) |  |  | 62d → 64d |  |  |
| 77 | **Actions locaux** | 2003-08-22 → 2003-08-19 (-3d) | 2003-08-28 → 2003-08-25 (-3d) |  |  | 60d → 61d |  |  |
| 78 | Codage | 2003-08-22 → 2003-08-19 (-3d) | 2003-08-25 → 2003-08-21 (-4d) |  |  | 62d → 63d |  |  |
| 79 | Test | 2003-08-26 → 2003-08-22 (-4d) | 2003-08-28 → 2003-08-25 (-3d) |  |  | 60d → 61d |  |  |
| 80 | **Événements** | 2003-08-29 → 2003-08-26 (-3d) | 2003-09-08 → 2003-09-04 (-4d) | 7d? → 8d? |  |  |  |  |
| 81 | Menu | 2003-08-29 → 2003-08-26 (-3d) | 2003-08-29 → 2003-08-26 (-3d) |  |  | 60d → 61d |  |  |
| 82 | **Actions événements** | 2003-09-02 → 2003-08-28 (-5d) | 2003-09-08 → 2003-09-04 (-4d) | 5d → 6d |  |  |  |  |
| 83 | Codage | 2003-09-02 → 2003-08-28 (-5d) | 2003-09-04 → 2003-08-29 (-6d) |  |  | 58d → 60d |  |  |
| 84 | Test | 2003-09-05 → 2003-09-02 (-3d) | 2003-09-08 → 2003-09-04 (-4d) |  |  |  |  |  |
| 85 | **Groupe** | 2003-09-09 → 2003-09-05 (-4d) | 2003-09-18 → 2003-09-15 (-3d) | 8d? → 7d? |  | 53d → 54d |  |  |
| 86 | Menu | 2003-09-09 → 2003-09-05 (-4d) | 2003-09-11 → 2003-09-08 (-3d) |  |  |  |  |  |
| 87 | **Actions groupes** | 2003-09-12 → 2003-09-09 (-3d) | 2003-09-18 → 2003-09-15 (-3d) |  |  | 53d → 54d |  |  |
| 88 | Codage | 2003-09-12 → 2003-09-09 (-3d) | 2003-09-15 → 2003-09-11 (-4d) |  |  |  |  |  |
| 89 | Test | 2003-09-16 → 2003-09-12 (-4d) | 2003-09-18 → 2003-09-15 (-3d) |  |  | 53d → 54d |  |  |
| 90 | **Affectation manuelle** | 2003-09-19 → 2003-09-16 (-3d) | 2003-09-29 → 2003-09-25 (-4d) | 7d → 8d |  |  |  |  |
| 91 | Menu | 2003-09-19 → 2003-09-16 (-3d) | 2003-09-22 → 2003-09-18 (-4d) |  |  | 54d → 53d |  |  |
| 92 | **Actions affectation manuelle** | 2003-09-23 → 2003-09-19 (-4d) | 2003-09-29 → 2003-09-25 (-4d) |  |  |  |  |  |
| 93 | Codage | 2003-09-23 → 2003-09-19 (-4d) | 2003-09-25 → 2003-09-22 (-3d) |  |  | 53d → 54d |  |  |
| 94 | Test | 2003-09-26 → 2003-09-23 (-3d) | 2003-09-29 → 2003-09-25 (-4d) |  |  |  |  |  |
| 95 | **Menu Optimisation** | 2003-09-30 → 2003-09-26 (-4d) | 2003-10-06 → 2003-10-02 (-4d) |  |  | 24d → 23d |  |  |
| 96 | Codage | 2003-09-30 → 2003-09-26 (-4d) | 2003-10-02 → 2003-09-29 (-3d) |  |  | 23d → 24d |  |  |
| 97 | Test | 2003-10-03 → 2003-09-30 (-3d) | 2003-10-06 → 2003-10-02 (-4d) |  |  | 24d → 23d |  |  |
| 100 | Fin Livrable 3 | 2003-10-06 → 2003-10-02 (-4d) | 2003-10-06 → 2003-10-02 (-4d) |  |  |  |  |  |
| 101 | **Livrable 4 Construction Horaire** | 2003-10-07 → 2003-10-03 (-4d) | 2003-11-07 → 2003-11-04 (-3d) | 24d? → 23d? |  | 22d → 23d |  |  |

| ID | Task | Start | Finish | Duration | Total float |
| --- | --- | --- | --- | --- | --- |
| 102 | **Affectation initiale 2** | 2003-10-07 → 2003-10-03 (-4d) | 2003-10-17 → 2003-10-14 (-3d) | 9d? → 8d? | 37d → 36d |
| 103 | Codage actions Affectation | 2003-10-07 → 2003-10-03 (-4d) | 2003-10-09 → 2003-10-06 (-3d) |  | 43d → 44d |
| 104 | Test | 2003-10-10 → 2003-10-07 (-3d) | 2003-10-14 → 2003-10-09 (-5d) |  | 40d → 41d |
| 105 | Calcul de conflits | 2003-10-16 → 2003-10-10 (-6d) | 2003-10-17 → 2003-10-14 (-3d) |  |  |
| 106 | **Conflits enseignants** | 2003-10-20 → 2003-10-16 (-4d) | 2003-10-24 → 2003-10-21 (-3d) | 5d? → 4d? |  |
| 107 | Actions associées conflits enseigents | 2003-10-20 → 2003-10-16 (-4d) | 2003-10-21 → 2003-10-17 (-4d) |  |  |
| 108 | Test | 2003-10-23 → 2003-10-20 (-3d) | 2003-10-24 → 2003-10-21 (-3d) |  |  |
| 109 | **Conflits étudiants** | 2003-10-27 → 2003-10-23 (-4d) | 2003-10-31 → 2003-10-28 (-3d) | 5d? → 4d? | 27d → 28d |
| 110 | Actions associées conflits étudiants | 2003-10-27 → 2003-10-23 (-4d) | 2003-10-28 → 2003-10-24 (-4d) |  |  |
| 111 | Test | 2003-10-30 → 2003-10-27 (-3d) | 2003-10-31 → 2003-10-28 (-3d) |  | 27d → 28d |
| 112 | **Conflits locaux** | 2003-11-03 → 2003-10-30 (-4d) | 2003-11-07 → 2003-11-04 (-3d) | 5d? → 4d? | 22d → 23d |
| 113 | Actions associées conflits locaux | 2003-11-03 → 2003-10-30 (-4d) | 2003-11-04 → 2003-10-31 (-4d) |  |  |
| 114 | Test | 2003-11-06 → 2003-11-03 (-3d) | 2003-11-07 → 2003-11-04 (-3d) |  | 22d → 23d |
| 115 | **Actions associées conflits et interface** | 2003-10-27 → 2003-10-23 (-4d) | 2003-10-31 → 2003-10-28 (-3d) | 5d? → 4d? | 27d → 28d |
| 116 | Codage | 2003-10-27 → 2003-10-23 (-4d) | 2003-10-28 → 2003-10-24 (-4d) |  |  |
| 117 | Test | 2003-10-30 → 2003-10-27 (-3d) | 2003-10-31 → 2003-10-28 (-3d) |  | 27d → 28d |
| 118 | Dialoges amélioration manuelle | 2003-10-07 → 2003-10-03 (-4d) | 2003-10-09 → 2003-10-06 (-3d) |  | 43d → 44d |
| 119 | **Actions amélioration manuelle** | 2003-10-10 → 2003-10-07 (-3d) | 2003-10-17 → 2003-10-14 (-3d) |  | 37d → 38d |
| 120 | Codage | 2003-10-10 → 2003-10-07 (-3d) | 2003-10-14 → 2003-10-09 (-5d) |  | 40d → 41d |
| 121 | Test | 2003-10-16 → 2003-10-10 (-6d) | 2003-10-17 → 2003-10-14 (-3d) |  | 37d → 38d |
| 122 | Exporter données | 2003-10-20 → 2003-10-16 (-4d) | 2003-10-21 → 2003-10-17 (-4d) |  |  |
| 123 | **Actions exporter données** | 2003-10-23 → 2003-10-20 (-3d) | 2003-11-04 → 2003-10-31 (-4d) | 9d? → 10d? | 12d → 13d |
| 124 | Codage | 2003-10-23 → 2003-10-20 (-3d) | 2003-10-24 → 2003-10-21 (-3d) |  | 32d → 33d |
| 125 | Test | 2003-11-03 → 2003-10-30 (-4d) | 2003-11-04 → 2003-10-31 (-4d) |  |  |
| 126 | Fin Livrable 4 | 2003-11-04 → 2003-10-31 (-4d) | 2003-11-04 → 2003-10-31 (-4d) |  | 6d → 5d |
| 127 | **Livrable 5 Optimisation + Rapports** | 2003-11-06 → 2003-11-03 (-3d) | 2003-11-28 → 2003-11-25 (-3d) |  |  |
| 128 | Optimisation | 2003-11-10 → 2003-11-06 (-4d) | 2003-11-11 → 2003-11-07 (-4d) |  |  |
| 129 | Codage | 2003-11-13 → 2003-11-10 (-3d) | 2003-11-14 → 2003-11-11 (-3d) |  | 17d → 18d |
| 130 | Test | 2003-11-17 → 2003-11-13 (-4d) | 2003-11-18 → 2003-11-14 (-4d) |  |  |
| 131 | Dialog de rapports | 2003-11-06 → 2003-11-03 (-3d) | 2003-11-07 → 2003-11-04 (-3d) |  |  |
| 132 | Rapport complet | 2003-11-10 → 2003-11-06 (-4d) | 2003-11-11 → 2003-11-07 (-4d) |  |  |
| 133 | Rapport conflits | 2003-11-13 → 2003-11-10 (-3d) | 2003-11-14 → 2003-11-11 (-3d) |  |  |
| 134 | Rapport importation | 2003-11-17 → 2003-11-13 (-4d) | 2003-11-18 → 2003-11-14 (-4d) |  |  |
| 135 | Rapport liste d'activités | 2003-11-20 → 2003-11-17 (-3d) | 2003-11-21 → 2003-11-18 (-3d) |  |  |
| 136 | Rapport groupes | 2003-11-24 → 2003-11-20 (-4d) | 2003-11-25 → 2003-11-21 (-4d) |  |  |
| 137 | Rapport complet & ranger | 2003-11-27 → 2003-11-24 (-3d) | 2003-11-28 → 2003-11-25 (-3d) |  |  |
| 138 | Fin Livrable 5 | 2003-11-28 → 2003-11-25 (-3d) | 2003-11-28 → 2003-11-25 (-3d) |  | 5d → 6d |
| 139 | **Livrable 6 Maintenance** | 2003-12-01 → 2003-11-27 (-4d) | 2003-12-09 → 2003-12-05 (-4d) |  |  |
| 140 | Compéter les menus | 2003-12-01 → 2003-11-27 (-4d) | 2003-12-02 → 2003-11-28 (-4d) |  |  |
| 141 | Compléter lesrapports | 2003-12-04 → 2003-12-01 (-3d) | 2003-12-05 → 2003-12-02 (-3d) |  | 2d → 3d |
| 142 | Ajout des fonctionnalitées | 2003-12-08 → 2003-12-04 (-4d) | 2003-12-09 → 2003-12-05 (-4d) |  |  |

## Version 13 (saved 2003-08-21)

Last finish stays 2003-12-05.

Changed:

| ID | Task | Finish | Duration | Complete | Total float |
| --- | --- | --- | --- | --- | --- |
| 29 | **Livrable 3 Horaire Manuel sans aide** |  |  | 14% → 16% |  |
| 99 | Status bar | 2003-09-04 → 2003-08-21 (-14d) | 10d? → 3d? |  | 43d → 53d |

## Version 14 (saved 2003-09-09)

Last finish 2003-12-05 → 2003-12-12 (+7d). Complete tasks 33 → 38.

Changed:

| ID | Task | Start | Finish | Duration | Complete | Total float |
| --- | --- | --- | --- | --- | --- | --- |
| 29 | **Livrable 3 Horaire Manuel sans aide** |  | 2003-10-02 → 2003-10-07 (+5d) | 59d? → 62d? | 16% → 43% | 46d → 48d |
| 37 | **SetOfEvents** | 2003-08-18 A | 2003-08-25 → 2003-08-29 (+4d) | 6d? → 10d? | 0% → 75% | 24d → 25d |
| 38 | Construction | 2003-08-18 A | 2003-08-21 → 2003-08-26 A (+5d) | 3d? → 6d | 0% → 100% | 23d → none |
| 39 | Test | 2003-08-22 → 2003-08-28 (+6d) | 2003-08-25 → 2003-08-29 (+4d) |  |  | 24d → 25d |
| 40 | **Matrice conflits étudiants** | 2003-08-26 → 2003-09-02 (+7d) | 2003-08-29 → 2003-09-05 (+7d) |  |  |  |
| 41 | Construction | 2003-08-26 → 2003-09-02 (+7d) | 2003-08-28 → 2003-09-04 (+7d) |  |  |  |
| 42 | Test | 2003-08-29 → 2003-09-05 (+7d) | 2003-08-29 → 2003-09-05 (+7d) |  |  |  |
| 43 | **Matrice de groupes** | 2003-09-02 → 2003-09-08 (+6d) | 2003-09-04 → 2003-09-09 (+5d) | 3d? → 2d? |  | 22d → 24d |
| 44 | Construction | 2003-09-02 → 2003-09-08 (+6d) | 2003-09-02 → 2003-09-08 (+6d) |  |  | 23d → 24d |
| 45 | Test | 2003-09-04 → 2003-09-09 (+5d) | 2003-09-04 → 2003-09-09 (+5d) |  |  | 22d → 25d |
| 46 | **Affectation événement** | 2003-09-05 → 2003-09-11 (+6d) | 2003-09-08 → 2003-09-12 (+4d) |  |  | 22d → 25d |
| 47 | Construction | 2003-09-05 → 2003-09-11 (+6d) | 2003-09-05 → 2003-09-11 (+6d) |  |  | 22d → 25d |
| 48 | Test | 2003-09-08 → 2003-09-12 (+4d) | 2003-09-08 → 2003-09-12 (+4d) |  |  | 23d → 25d |
| 49 | **Recherche Conflits étudiants** | 2003-09-09 → 2003-09-15 (+6d) | 2003-09-11 → 2003-09-16 (+5d) | 3d? → 2d? |  | 23d → 25d |
| 50 | Construction | 2003-09-09 → 2003-09-15 (+6d) | 2003-09-09 → 2003-09-15 (+6d) |  |  | 23d → 25d |
| 51 | Test | 2003-09-11 → 2003-09-16 (+5d) | 2003-09-11 → 2003-09-16 (+5d) |  |  | 23d → 25d |
| 52 | **Recherche Conflits locaux** | 2003-09-12 → 2003-09-18 (+6d) | 2003-09-15 → 2003-09-19 (+4d) |  |  | 24d → 25d |
| 53 | Construction | 2003-09-12 → 2003-09-18 (+6d) | 2003-09-12 → 2003-09-18 (+6d) |  |  | 24d → 25d |
| 54 | Test | 2003-09-15 → 2003-09-19 (+4d) | 2003-09-15 → 2003-09-19 (+4d) |  |  | 24d → 25d |
| 55 | **Recherche Conflits enseignants** | 2003-09-16 → 2003-09-22 (+6d) | 2003-09-18 → 2003-09-23 (+5d) | 3d? → 2d? |  | 23d → 25d |
| 56 | Construction | 2003-09-16 → 2003-09-22 (+6d) | 2003-09-16 → 2003-09-22 (+6d) |  |  | 24d → 25d |
| 57 | Test | 2003-09-18 → 2003-09-23 (+5d) | 2003-09-18 → 2003-09-23 (+5d) |  |  | 23d → 25d |
| 58 | **Balancement de groupes** | 2003-09-19 → 2003-09-25 (+6d) | 2003-09-22 → 2003-09-26 (+4d) |  |  | 24d → 25d |
| 59 | Construction | 2003-09-19 → 2003-09-25 (+6d) | 2003-09-19 → 2003-09-25 (+6d) |  |  | 24d → 25d |
| 60 | Test | 2003-09-22 → 2003-09-26 (+4d) | 2003-09-22 → 2003-09-26 (+4d) |  |  | 24d → 25d |
| 61 | **Affectation initiale** | 2003-09-23 → 2003-09-29 (+6d) | 2003-09-25 → 2003-09-30 (+5d) | 3d? → 2d? |  | 23d → 25d |
| 62 | Construction | 2003-09-23 → 2003-09-29 (+6d) | 2003-09-23 → 2003-09-29 (+6d) |  |  | 24d → 25d |
| 63 | Test | 2003-09-25 → 2003-09-30 (+5d) | 2003-09-25 → 2003-09-30 (+5d) |  |  | 23d → 25d |
| 64 | **Amélioration manuelle** | 2003-09-26 → 2003-10-02 (+6d) | 2003-09-29 → 2003-10-03 (+4d) |  |  | 24d → 25d |
| 65 | Construction | 2003-09-26 → 2003-10-02 (+6d) | 2003-09-26 → 2003-10-02 (+6d) |  |  | 24d → 25d |
| 66 | Test | 2003-09-29 → 2003-10-03 (+4d) | 2003-09-29 → 2003-10-03 (+4d) |  |  | 24d → 25d |
| 67 | **Exportation** | 2003-09-30 → 2003-10-06 (+6d) | 2003-10-02 → 2003-10-07 (+5d) | 3d? → 2d? |  | 23d → 25d |
| 68 | Construction | 2003-09-30 → 2003-10-06 (+6d) | 2003-09-30 → 2003-10-06 (+6d) |  |  | 24d → 25d |
| 69 | Test | 2003-10-02 → 2003-10-07 (+5d) | 2003-10-02 → 2003-10-07 (+5d) |  |  | 23d → 25d |
| 75 | **Locaux** | 2003-08-18 A |  | 6d? → 6d | 0% → 20% | 61d → 1d |
| 76 | Menu | 2003-08-18 A | 2003-08-18 A | 1d? → 1d | 0% → 100% | 64d → none |
| 80 | **Événements** | 2003-08-26 A |  | 8d? → 8d | 0% → 20% | 56d → 0d |
| 81 | Menu | 2003-08-26 A | 2003-08-26 A | 1d? → 1d | 0% → 100% | 61d → none |
| 85 | **Groupe** | 2003-09-05 A | 2003-09-15 → 2003-09-16 (+1d) | 7d? → 8d? | 0% → 50% | 54d → 58d |
| 86 | Menu | 2003-09-05 A | 2003-09-08 → 2003-09-11 A (+3d) | 2d? → 4d | 0% → 100% | 56d → none |
| 87 | **Actions groupes** | 2003-09-09 → 2003-09-12 (+3d) | 2003-09-15 → 2003-09-16 (+1d) | 5d? → 3d? |  | 54d → 58d |
| 88 | Codage | 2003-09-09 → 2003-09-12 (+3d) | 2003-09-11 → 2003-09-15 (+4d) |  |  | 56d → 59d |
| 89 | Test | 2003-09-12 → 2003-09-15 (+3d) | 2003-09-15 → 2003-09-16 (+1d) |  |  | 54d → 58d |
| 90 | **Affectation manuelle** | 2003-09-16 → 2003-09-18 (+2d) | 2003-09-25 → 2003-09-29 (+4d) |  |  | 51d → 54d |
| 91 | Menu | 2003-09-16 → 2003-09-18 (+2d) | 2003-09-18 → 2003-09-19 (+1d) |  |  | 53d → 57d |
| 92 | **Actions affectation manuelle** | 2003-09-19 → 2003-09-22 (+3d) | 2003-09-25 → 2003-09-29 (+4d) | 5d → 6d |  | 51d → 54d |
| 93 | Codage | 2003-09-19 → 2003-09-22 (+3d) | 2003-09-22 → 2003-09-23 (+1d) |  |  | 54d → 58d |
| 94 | Test | 2003-09-23 → 2003-09-26 (+3d) | 2003-09-25 → 2003-09-29 (+4d) |  |  | 51d → 54d |
| 98 | Automate menu | 2003-07-17 A |  |  | 0% → 80% | 45d → 85d |
| 99 | Status bar | 2003-08-18 A | 2003-08-21 A |  | 0% → 100% | 53d → none |
| 100 | Fin Livrable 3 | 2003-10-02 → 2003-10-07 (+5d) | 2003-10-02 → 2003-10-07 (+5d) |  |  | 24d → 26d |
| 101 | **Livrable 4 Construction Horaire** | 2003-10-03 → 2003-10-09 (+6d) | 2003-11-04 → 2003-11-11 (+7d) | 23d? → 24d? |  |  |
| 102 | **Affectation initiale 2** | 2003-10-03 → 2003-10-09 (+6d) | 2003-10-14 → 2003-10-17 (+3d) | 8d? → 7d? |  | 36d → 37d |
| 103 | Codage actions Affectation | 2003-10-03 → 2003-10-09 (+6d) | 2003-10-06 → 2003-10-10 (+4d) |  |  | 44d → 45d |
| 104 | Test | 2003-10-07 → 2003-10-14 (+7d) | 2003-10-09 → 2003-10-16 (+7d) |  |  |  |
| 105 | Calcul de conflits | 2003-10-10 → 2003-10-16 (+6d) | 2003-10-14 → 2003-10-17 (+3d) |  |  | 30d → 32d |
| 106 | **Conflits enseignants** | 2003-10-16 → 2003-10-20 (+4d) | 2003-10-21 → 2003-10-24 (+3d) | 4d? → 5d? |  | 30d → 32d |
| 107 | Actions associées conflits enseigents | 2003-10-16 → 2003-10-20 (+4d) | 2003-10-17 → 2003-10-21 (+4d) |  |  | 30d → 33d |
| 108 | Test | 2003-10-20 → 2003-10-23 (+3d) | 2003-10-21 → 2003-10-24 (+3d) |  |  | 30d → 32d |
| 109 | **Conflits étudiants** | 2003-10-23 → 2003-10-30 (+7d) | 2003-10-28 → 2003-11-04 (+7d) |  |  |  |
| 110 | Actions associées conflits étudiants | 2003-10-23 → 2003-10-30 (+7d) | 2003-10-24 → 2003-10-31 (+7d) |  |  |  |
| 111 | Test | 2003-10-27 → 2003-11-03 (+7d) | 2003-10-28 → 2003-11-04 (+7d) |  |  |  |
| 112 | **Conflits locaux** | 2003-10-30 → 2003-11-06 (+7d) | 2003-11-04 → 2003-11-11 (+7d) |  |  |  |
| 113 | Actions associées conflits locaux | 2003-10-30 → 2003-11-06 (+7d) | 2003-10-31 → 2003-11-07 (+7d) |  |  |  |
| 114 | Test | 2003-11-03 → 2003-11-10 (+7d) | 2003-11-04 → 2003-11-11 (+7d) |  |  |  |
| 115 | **Actions associées conflits et interface** | 2003-10-23 → 2003-10-27 (+4d) | 2003-10-28 → 2003-11-03 (+6d) | 4d? → 6d? |  | 28d → 29d |
| 116 | Codage | 2003-10-23 → 2003-10-27 (+4d) | 2003-10-24 → 2003-10-28 (+4d) |  |  | 30d → 33d |
| 117 | Test | 2003-10-27 → 2003-10-31 (+4d) | 2003-10-28 → 2003-11-03 (+6d) |  |  | 28d → 29d |
| 118 | Dialoges amélioration manuelle | 2003-10-03 → 2003-10-09 (+6d) | 2003-10-06 → 2003-10-10 (+4d) |  |  | 44d → 45d |
| 119 | **Actions amélioration manuelle** | 2003-10-07 → 2003-10-14 (+7d) | 2003-10-14 → 2003-10-17 (+3d) | 6d? → 4d? |  | 38d → 40d |

| ID | Task | Start | Finish | Total float |
| --- | --- | --- | --- | --- |
| 120 | Codage | 2003-10-07 → 2003-10-14 (+7d) | 2003-10-09 → 2003-10-16 (+7d) |  |
| 121 | Test | 2003-10-10 → 2003-10-16 (+6d) | 2003-10-14 → 2003-10-17 (+3d) | 38d → 40d |
| 122 | Exporter données | 2003-10-16 → 2003-10-23 (+7d) | 2003-10-17 → 2003-10-24 (+7d) |  |
| 123 | **Actions exporter données** | 2003-10-20 → 2003-10-27 (+7d) | 2003-10-31 → 2003-11-07 (+7d) |  |
| 124 | Codage | 2003-10-20 → 2003-10-27 (+7d) | 2003-10-21 → 2003-10-28 (+7d) |  |
| 125 | Test | 2003-10-30 → 2003-11-06 (+7d) | 2003-10-31 → 2003-11-07 (+7d) |  |
| 126 | Fin Livrable 4 | 2003-10-31 → 2003-11-07 (+7d) | 2003-10-31 → 2003-11-07 (+7d) |  |
| 127 | **Livrable 5 Optimisation + Rapports** | 2003-11-03 → 2003-11-10 (+7d) | 2003-11-25 → 2003-12-02 (+7d) |  |
| 128 | Optimisation | 2003-11-06 → 2003-11-13 (+7d) | 2003-11-07 → 2003-11-14 (+7d) |  |
| 129 | Codage | 2003-11-10 → 2003-11-17 (+7d) | 2003-11-11 → 2003-11-18 (+7d) |  |
| 130 | Test | 2003-11-13 → 2003-11-20 (+7d) | 2003-11-14 → 2003-11-21 (+7d) |  |
| 131 | Dialog de rapports | 2003-11-03 → 2003-11-10 (+7d) | 2003-11-04 → 2003-11-11 (+7d) |  |
| 132 | Rapport complet | 2003-11-06 → 2003-11-13 (+7d) | 2003-11-07 → 2003-11-14 (+7d) |  |
| 133 | Rapport conflits | 2003-11-10 → 2003-11-17 (+7d) | 2003-11-11 → 2003-11-18 (+7d) |  |
| 134 | Rapport importation | 2003-11-13 → 2003-11-20 (+7d) | 2003-11-14 → 2003-11-21 (+7d) |  |
| 135 | Rapport liste d'activités | 2003-11-17 → 2003-11-24 (+7d) | 2003-11-18 → 2003-11-25 (+7d) |  |
| 136 | Rapport groupes | 2003-11-20 → 2003-11-27 (+7d) | 2003-11-21 → 2003-11-28 (+7d) |  |
| 137 | Rapport complet & ranger | 2003-11-24 → 2003-12-01 (+7d) | 2003-11-25 → 2003-12-02 (+7d) |  |
| 138 | Fin Livrable 5 | 2003-11-25 → 2003-12-02 (+7d) | 2003-11-25 → 2003-12-02 (+7d) |  |
| 139 | **Livrable 6 Maintenance** | 2003-11-27 → 2003-12-04 (+7d) | 2003-12-05 → 2003-12-12 (+7d) |  |
| 140 | Compéter les menus | 2003-11-27 → 2003-12-04 (+7d) | 2003-11-28 → 2003-12-05 (+7d) |  |
| 141 | Compléter lesrapports | 2003-12-01 → 2003-12-08 (+7d) | 2003-12-02 → 2003-12-09 (+7d) |  |
| 142 | Ajout des fonctionnalitées | 2003-12-04 → 2003-12-11 (+7d) | 2003-12-05 → 2003-12-12 (+7d) |  |

## Version 15 (data date 2003-09-12, saved 2003-09-12)

Last finish 2003-12-12 → 2003-11-17 (-25d). Complete tasks 38 → 54.

Changed:

| ID | Task | Start | Finish | Duration | Complete | Total float | Predecessors | Other |
| --- | --- | --- | --- | --- | --- | --- | --- | --- |
| 1 | Début | 2003-05-12 A | 2003-05-12 A |  | 0% → 100% | 150d → none |  |  |
| 22 | Modif Ddocument | 2003-05-26 A → 2003-05-30 A (+4d) | 2003-05-29 A → 2003-06-04 A (+6d) |  |  |  |  |  |
| 26 | Tool bar modif grille | 2003-05-29 A → 2003-06-04 A (+6d) | 2003-06-02 A → 2003-06-09 A (+7d) |  |  |  |  |  |
| 27 | Actions Toolbar | 2003-06-03 A → 2003-06-09 A (+6d) | 2003-06-10 A → 2003-06-16 A (+6d) |  |  |  |  |  |
| 29 | **Livrable 3 Horaire Manuel sans aide** |  | 2003-10-07 → 2003-10-16 (+9d) | 62d? → 69d? | 43% → 73% | 48d → 22d |  |  |
| 31 | **Menu Activites** |  | 2003-07-24 A → 2003-07-22 A (-2d) | 6d? → 4d |  |  |  |  |
| 32 | Dialogue |  | 2003-07-21 A → 2003-07-18 A (-3d) | 3d? → 2d |  |  |  |  |
| 33 | Actions | 2003-07-22 A → 2003-07-21 A (-1d) | 2003-07-24 A → 2003-07-22 A (-2d) | 2d? → 2d |  |  |  |  |
| 34 | **Adaptation disponibilite-grille** | 2003-07-25 A → 2003-07-24 A (-1d) | 2003-08-11 A → 2003-07-25 A (-17d) | 12d? → 2d |  |  |  |  |
| 35 | Codage | 2003-07-25 A → 2003-07-24 A (-1d) | 2003-07-25 A → 2003-07-24 A (-1d) | 1d? → 1d |  |  |  |  |
| 36 | Test | 2003-08-11 A → 2003-07-25 A (-17d) | 2003-08-11 A → 2003-07-25 A (-17d) | 1d? → 1d |  |  |  |  |
| 37 | **SetOfEvents** |  | 2003-08-29 A | 10d? → 10d | 75% → 100% | 25d → none |  |  |
| 39 | Test | 2003-08-28 A | 2003-08-29 A | 2d? → 2d | 0% → 100% | 25d → none |  |  |
| 40 | **Matrice conflits étudiants** | 2003-09-02 A | 2003-09-05 A |  | 0% → 100% | 24d → none |  |  |
| 41 | Construction | 2003-09-02 A | 2003-09-04 A | 2d? → 2d | 0% → 100% | 23d → none |  |  |
| 42 | Test | 2003-09-05 A | 2003-09-05 A |  | 0% → 100% | 24d → none |  |  |
| 43 | **Matrice de groupes** | 2003-09-08 A | 2003-09-09 A |  | 0% → 100% | 24d → none |  |  |
| 44 | Construction | 2003-09-08 A | 2003-09-08 A |  | 0% → 100% | 24d → none |  |  |
| 45 | Test | 2003-09-09 A | 2003-09-09 A |  | 0% → 100% | 25d → none |  |  |
| 46 | **Affectation événement** | 2003-09-11 A | 2003-09-12 → 2003-09-15 A (+3d) | 2d? → 2.8d? | 0% → 100% | 25d → none |  |  |
| 47 | Construction | 2003-09-11 A | 2003-09-11 → 2003-09-12 A (+1d) | 1d? → 2d | 0% → 100% | 25d → none |  |  |
| 48 | Test | 2003-09-12 A | 2003-09-12 → 2003-09-15 A (+3d) |  | 0% → 100% | 25d → none |  |  |
| 49 | **Recherche Conflits étudiants** | 2003-09-15 → 2003-09-19 A (+4d) | 2003-09-16 → 2003-09-22 (+6d) |  | 0% → 50% | 25d → 33d |  |  |
| 50 | Construction | 2003-09-15 → 2003-09-19 A (+4d) | 2003-09-15 → 2003-09-19 A (+4d) | 1d? → 1d | 0% → 100% | 25d → none |  |  |
| 51 | Test | 2003-09-16 → 2003-09-22 (+6d) | 2003-09-16 → 2003-09-22 (+6d) |  |  | 25d → 33d |  |  |
| 52 | **Recherche Conflits locaux** | 2003-09-18 → 2003-09-23 (+5d) | 2003-09-19 → 2003-09-25 (+6d) | 2d? → 3d? |  | 25d → 32d |  |  |
| 53 | Construction | 2003-09-18 → 2003-09-23 (+5d) | 2003-09-18 → 2003-09-23 (+5d) |  |  | 25d → 33d |  |  |
| 54 | Test | 2003-09-19 → 2003-09-25 (+6d) | 2003-09-19 → 2003-09-25 (+6d) |  |  | 25d → 32d |  |  |
| 55 | **Recherche Conflits enseignants** | 2003-09-22 → 2003-09-26 (+4d) | 2003-09-23 → 2003-09-29 (+6d) |  |  | 25d → 32d |  |  |
| 56 | Construction | 2003-09-22 → 2003-09-26 (+4d) | 2003-09-22 → 2003-09-26 (+4d) |  |  | 25d → 32d |  |  |
| 57 | Test | 2003-09-23 → 2003-09-29 (+6d) | 2003-09-23 → 2003-09-29 (+6d) |  |  | 25d → 33d |  |  |
| 58 | **Balancement de groupes** | 2003-09-25 → 2003-09-30 (+5d) | 2003-09-26 → 2003-10-02 (+6d) | 2d? → 3d? |  | 25d → 32d |  |  |
| 59 | Construction | 2003-09-25 → 2003-09-30 (+5d) | 2003-09-25 → 2003-09-30 (+5d) |  |  | 25d → 33d |  |  |
| 60 | Test | 2003-09-26 → 2003-10-02 (+6d) | 2003-09-26 → 2003-10-02 (+6d) |  |  | 25d → 32d |  |  |
| 61 | **Affectation initiale** | 2003-09-29 → 2003-10-03 A (+4d) | 2003-09-30 → 2003-10-06 A (+6d) | 2d? → 2d | 0% → 100% | 25d → none |  |  |
| 62 | Construction | 2003-09-29 → 2003-10-03 A (+4d) | 2003-09-29 → 2003-10-03 A (+4d) | 1d? → 1d | 0% → 100% | 25d → none |  |  |
| 63 | Test | 2003-09-30 → 2003-10-06 A (+6d) | 2003-09-30 → 2003-10-06 A (+6d) | 1d? → 1d | 0% → 100% | 25d → none |  |  |
| 64 | **Amélioration manuelle** | 2003-10-02 → 2003-10-07 (+5d) | 2003-10-03 → 2003-10-09 (+6d) | 2d? → 3d? |  | 25d → 1d |  |  |
| 65 | Construction | 2003-10-02 → 2003-10-07 (+5d) | 2003-10-02 → 2003-10-07 (+5d) |  |  | 25d → 2d |  |  |
| 66 | Test | 2003-10-03 → 2003-10-09 (+6d) | 2003-10-03 → 2003-10-09 (+6d) |  |  | 25d → 1d |  |  |
| 67 | **Exportation** | 2003-10-06 → 2003-10-10 (+4d) | 2003-10-07 → 2003-10-14 (+7d) | 2d? → 3d? |  | 25d → 2d |  |  |
| 68 | Construction | 2003-10-06 → 2003-10-10 (+4d) | 2003-10-06 → 2003-10-10 (+4d) |  |  | 25d → 2d |  |  |
| 69 | Test | 2003-10-07 → 2003-10-14 (+7d) | 2003-10-07 → 2003-10-14 (+7d) |  |  | 25d → 2d |  |  |
| 72 | **Actions enseignants** |  |  |  |  |  | 71 → none |  |
| 73 | Codage |  |  |  |  |  | none → 71 |  |
| 75 | **Locaux** |  | 2003-08-25 → 2003-08-29 (+4d) | 6d → 9.5d | 20% → 99% | 1d → 0d | 70 → 70, 74 |  |
| 77 | **Actions locaux** | 2003-08-19 A | 2003-08-25 → 2003-08-29 A (+4d) | 5d → 8.5d | 0% → 100% | 1d → none |  |  |
| 78 | Codage | 2003-08-19 A | 2003-08-21 → 2003-08-25 A (+4d) | 2d → 4d | 0% → 100% | 63d → none | none → 76 |  |
| 79 | Test | 2003-08-22 → 2003-08-26 A (+4d) | 2003-08-25 → 2003-08-29 A (+4d) |  | 0% → 100% | 1d → none | none → 78 |  |
| 80 | **Événements** | 2003-08-26 A → 2003-09-01 A (+6d) | 2003-09-04 → 2003-09-08 A (+4d) | 8d → 6d | 20% → 100% | 0d → none |  |  |
| 81 | Menu | 2003-08-26 A → 2003-09-01 A (+6d) | 2003-08-26 A → 2003-09-01 A (+6d) |  |  |  |  |  |
| 82 | **Actions événements** | 2003-08-28 → 2003-09-02 A (+5d) | 2003-09-04 → 2003-09-08 A (+4d) | 6d → 5d | 0% → 100% | 0d → none |  |  |
| 83 | Codage | 2003-08-28 → 2003-09-02 A (+5d) | 2003-08-29 → 2003-09-04 A (+6d) |  | 0% → 100% | 60d → none |  |  |
| 84 | Test | 2003-09-02 → 2003-09-05 A (+3d) | 2003-09-04 → 2003-09-08 A (+4d) |  | 0% → 100% | 0d → none |  |  |
| 85 | **Groupe** | 2003-09-05 A → 2003-09-10 A (+5d) | 2003-09-16 → 2003-09-29 (+13d) | 8d? → 14d? | 50% → 73% | 58d → 30d |  |  |
| 86 | Menu | 2003-09-05 A → 2003-09-10 A (+5d) | 2003-09-11 A → 2003-09-16 A (+5d) |  |  |  |  |  |
| 87 | **Actions groupes** | 2003-09-12 → 2003-09-17 A (+5d) | 2003-09-16 → 2003-09-29 (+13d) | 3d? → 9d? | 0% → 57% | 58d → 30d |  |  |
| 88 | Codage | 2003-09-12 → 2003-09-17 A (+5d) | 2003-09-15 → 2003-09-25 (+10d) | 2d? → 5d | 0% → 80% | 59d → 30d |  |  |
| 89 | Test | 2003-09-15 → 2003-09-26 (+11d) | 2003-09-16 → 2003-09-29 (+13d) |  |  | 58d → 30d | none → 88 |  |
| 90 | **Affectation manuelle** | 2003-09-18 → 2003-09-30 (+12d) | 2003-09-29 → 2003-10-06 (+7d) | 8d → 5d |  | 54d → 30d |  |  |
| 91 | Menu | 2003-09-18 → 2003-09-30 (+12d) | 2003-09-19 → 2003-10-02 (+13d) |  |  | 57d → 30d |  |  |
| 92 | **Actions affectation manuelle** | 2003-09-22 → 2003-10-03 (+11d) | 2003-09-29 → 2003-10-06 (+7d) | 6d → 2d |  | 54d → 30d |  |  |
| 93 | Codage | 2003-09-22 → 2003-10-03 (+11d) | 2003-09-23 → 2003-10-06 (+13d) |  |  | 58d → 30d |  |  |
| 94 | Test | 2003-09-26 → 2003-10-03 (+7d) | 2003-09-29 → 2003-10-06 (+7d) |  |  | 54d → 30d |  |  |
| 95 | **Menu Optimisation** | 2003-09-26 → 2003-10-09 (+13d) | 2003-10-02 → 2003-10-16 (+14d) | 5d? → 6d? |  | 23d → 0d |  |  |
| 96 | Codage | 2003-09-26 → 2003-10-09 (+13d) | 2003-09-29 → 2003-10-10 (+11d) |  |  | 24d → 0d |  | constraint none → start no earlier than 2003-10-08 |
| 97 | Test | 2003-09-30 → 2003-10-14 (+14d) | 2003-10-02 → 2003-10-16 (+14d) |  |  | 23d → 0d |  |  |
| 98 | Automate menu |  | 2003-08-15 → 2003-08-18 A (+3d) | 10d → 11d | 80% → 100% | 85d → none |  |  |
| 99 | Status bar | 2003-08-18 A → 2003-08-19 A (+1d) | 2003-08-21 A → 2003-08-22 A (+1d) |  |  |  |  |  |
| 100 | Fin Livrable 3 | 2003-10-07 → 2003-10-16 (+9d) | 2003-10-07 → 2003-10-16 (+9d) |  |  | 26d → 0d |  |  |

| ID | Task | Start | Finish | Duration | Total float |
| --- | --- | --- | --- | --- | --- |
| 101 | **Livrable 4 Construction Horaire** | 2003-10-09 → 2003-10-17 (+8d) | 2003-11-11 → 2003-10-30 (-12d) | 24d? → 10d? | 23d → 0d |
| 102 | **Affectation initiale 2** | 2003-10-09 → 2003-10-17 (+8d) | 2003-10-17 → 2003-10-20 (+3d) | 7d? → 2d? | 37d → 12d |
| 103 | Codage actions Affectation | 2003-10-09 → 2003-10-17 (+8d) | 2003-10-10 → 2003-10-20 (+10d) |  | 45d → 20d |
| 104 | Test | 2003-10-14 → 2003-10-17 (+3d) | 2003-10-16 → 2003-10-20 (+4d) |  | 41d → 20d |
| 105 | Calcul de conflits | 2003-10-16 → 2003-10-17 (+1d) | 2003-10-17 → 2003-10-20 (+3d) |  | 32d → 12d |
| 106 | **Conflits enseignants** | 2003-10-20 → 2003-10-21 (+1d) | 2003-10-24 → 2003-10-27 (+3d) |  | 32d → 13d |
| 107 | Actions associées conflits enseigents | 2003-10-20 → 2003-10-21 (+1d) | 2003-10-21 → 2003-10-23 (+2d) |  | 33d → 12d |
| 108 | Test | 2003-10-23 → 2003-10-24 (+1d) | 2003-10-24 → 2003-10-27 (+3d) |  | 32d → 12d |
| 109 | **Conflits étudiants** | 2003-10-30 → 2003-10-17 (-13d) | 2003-11-04 → 2003-10-20 (-15d) | 4d? → 2d? | 28d → 20d |
| 110 | Actions associées conflits étudiants | 2003-10-30 → 2003-10-17 (-13d) | 2003-10-31 → 2003-10-20 (-11d) |  | 30d → 20d |
| 111 | Test | 2003-11-03 → 2003-10-17 (-17d) | 2003-11-04 → 2003-10-20 (-15d) |  | 28d → 20d |
| 112 | **Conflits locaux** | 2003-11-06 → 2003-10-17 (-20d) | 2003-11-11 → 2003-10-20 (-22d) | 4d? → 2d? | 23d → 20d |
| 113 | Actions associées conflits locaux | 2003-11-06 → 2003-10-17 (-20d) | 2003-11-07 → 2003-10-20 (-18d) |  | 25d → 20d |
| 114 | Test | 2003-11-10 → 2003-10-17 (-24d) | 2003-11-11 → 2003-10-20 (-22d) |  | 23d → 20d |
| 115 | **Actions associées conflits et interface** | 2003-10-27 → 2003-10-28 (+1d) | 2003-11-03 → 2003-10-30 (-4d) | 6d? → 3d? | 29d → 12d |
| 116 | Codage | 2003-10-27 → 2003-10-28 (+1d) | 2003-10-28 → 2003-10-30 (+2d) |  | 33d → 12d |
| 117 | Test | 2003-10-31 → 2003-10-28 (-3d) | 2003-11-03 → 2003-10-30 (-4d) |  | 29d → 12d |
| 118 | Dialoges amélioration manuelle | 2003-10-09 → 2003-10-17 (+8d) | 2003-10-10 → 2003-10-20 (+10d) |  | 45d → 20d |
| 119 | **Actions amélioration manuelle** | 2003-10-14 → 2003-10-17 (+3d) | 2003-10-17 → 2003-10-20 (+3d) | 4d? → 2d? | 40d → 20d |
| 120 | Codage | 2003-10-14 → 2003-10-17 (+3d) | 2003-10-16 → 2003-10-20 (+4d) |  | 41d → 20d |
| 121 | Test | 2003-10-16 → 2003-10-17 (+1d) | 2003-10-17 → 2003-10-20 (+3d) |  | 40d → 20d |
| 122 | Exporter données | 2003-10-23 → 2003-10-17 (-6d) | 2003-10-24 → 2003-10-20 (-4d) |  | 35d → 20d |
| 123 | **Actions exporter données** | 2003-10-27 → 2003-10-17 (-10d) | 2003-11-07 → 2003-10-20 (-18d) | 10d? → 2d? | 13d → 0d |
| 124 | Codage | 2003-10-27 → 2003-10-17 (-10d) | 2003-10-28 → 2003-10-20 (-8d) |  | 33d → 20d |
| 125 | Test | 2003-11-06 → 2003-10-17 (-20d) | 2003-11-07 → 2003-10-20 (-18d) |  | 5d → 0d |
| 126 | Fin Livrable 4 | 2003-11-07 → 2003-10-20 (-18d) | 2003-11-07 → 2003-10-20 (-18d) |  | 5d → 0d |
| 127 | **Livrable 5 Optimisation + Rapports** | 2003-11-10 → 2003-10-21 (-20d) | 2003-12-02 → 2003-11-13 (-19d) | 17d? → 18d? | 5d → 0d |
| 128 | Optimisation | 2003-11-13 → 2003-10-21 (-23d) | 2003-11-14 → 2003-10-23 (-22d) |  |  |
| 129 | Codage | 2003-11-17 → 2003-10-24 (-24d) | 2003-11-18 → 2003-10-27 (-22d) |  | 18d → 15d |
| 130 | Test | 2003-11-20 → 2003-10-24 (-27d) | 2003-11-21 → 2003-10-27 (-25d) |  |  |
| 131 | Dialog de rapports | 2003-11-10 → 2003-10-21 (-20d) | 2003-11-11 → 2003-10-23 (-19d) |  | 5d → 0d |
| 132 | Rapport complet | 2003-11-13 → 2003-10-24 (-20d) | 2003-11-14 → 2003-10-27 (-18d) |  | 5d → 0d |
| 133 | Rapport conflits | 2003-11-17 → 2003-10-28 (-20d) | 2003-11-18 → 2003-10-30 (-19d) |  | 5d → 0d |
| 134 | Rapport importation | 2003-11-20 → 2003-10-31 (-20d) | 2003-11-21 → 2003-11-03 (-18d) |  | 5d → 0d |
| 135 | Rapport liste d'activités | 2003-11-24 → 2003-11-04 (-20d) | 2003-11-25 → 2003-11-06 (-19d) |  | 5d → 0d |
| 136 | Rapport groupes | 2003-11-27 → 2003-11-07 (-20d) | 2003-11-28 → 2003-11-10 (-18d) |  | 5d → 0d |
| 137 | Rapport complet & ranger | 2003-12-01 → 2003-11-11 (-20d) | 2003-12-02 → 2003-11-13 (-19d) |  | 5d → 0d |
| 138 | Fin Livrable 5 | 2003-12-02 → 2003-11-13 (-19d) | 2003-12-02 → 2003-11-13 (-19d) |  | 6d → 0d |
| 139 | **Livrable 6 Maintenance** | 2003-12-04 → 2003-11-14 (-20d) | 2003-12-12 → 2003-11-17 (-25d) | 7d? → 2d? |  |
| 140 | Compéter les menus | 2003-12-04 → 2003-11-14 (-20d) | 2003-12-05 → 2003-11-17 (-18d) |  | 5d → 0d |
| 141 | Compléter lesrapports | 2003-12-08 → 2003-11-14 (-24d) | 2003-12-09 → 2003-11-17 (-22d) |  | 3d → 0d |
| 142 | Ajout des fonctionnalitées | 2003-12-11 → 2003-11-14 (-27d) | 2003-12-12 → 2003-11-17 (-25d) |  |  |

## Version 16 (data date 2003-09-12, saved 2004-03-16)

Last finish 2003-11-17 → 2004-03-19 (+123d).

Added:

| ID | Task | Duration | Start | Finish | Predecessors | Resources |
| --- | --- | --- | --- | --- | --- | --- |
| 143 | Manuel d'utilisation | 2d | 2004-02-19 A | 2004-02-23 |  | Yannick Syam |
| 144 | **N enseignants à un evenement** | 4d? | 2004-02-24 | 2004-02-27 | 143 | Yannick Syam |
| 145 | Modification de l'interface | 2d? | 2004-02-24 | 2004-02-25 |  |  |
| 146 | Modification de l'algorithme +test | 2d? | 2004-02-26 | 2004-02-27 | 145 |  |
| 147 | Affectation de locaux | 2d? | 2004-03-01 | 2004-03-02 | 146 |  |
| 148 | Horaire sans étudiants | 5d? | 2004-03-03 | 2004-03-09 | 147 |  |
| 149 | Importation selective | 3d? | 2004-03-10 | 2004-03-12 | 148 |  |
| 150 | Définition d'ensemble | 3d? | 2004-03-15 | 2004-03-17 | 149 |  |
| 151 | Grille partielle | 2d? | 2004-03-18 | 2004-03-19 | 150 |  |
| 152 | Entête de rapports | 1d? | 2003-11-14 | 2003-11-14 |  |  |
| 153 | **Quelques modifications** | 2d? | 2003-11-14 | 2003-11-17 |  |  |
| 154 | Automate des menus (Orientation de l'utilisation) | 2d? | 2003-11-14 | 2003-11-17 |  |  |
| 155 | Remplacer les boutons Fermer par annuler | 1d? | 2003-11-14 | 2003-11-14 |  |  |
| 156 | Rendre le rapport d'import visible une seule fois (lors de creation d'un horaire) | 1d? | 2003-11-14 | 2003-11-14 |  |  |

Changed:

| ID | Task | Start | Finish | Duration | Complete | Total float | Other |
| --- | --- | --- | --- | --- | --- | --- | --- |
| 139 | **Livrable 6 Maintenance** | 2003-11-14 A | 2003-11-17 → 2004-03-19 (+123d) | 2d? → 91d? | 0% → 3% |  |  |
| 141 | Compléter les rapports |  |  |  |  | 0d → 86d | was named Compléter lesrapports |

## Version 17 (data date 2003-09-12, saved 2004-03-18)

Last finish stays 2004-03-19.

Changed:

| ID | Task | Finish | Duration | Total float |
| --- | --- | --- | --- | --- |
| 7 | **Librable 2 Menu Fichier** |  | 36d? → 36d |  |
| 8 | Menu Nouveau Exam |  | 1d? → 1d |  |
| 16 | Action sauvegarde |  | 1d? → 1d |  |
| 17 | Lire/Écrire XML |  | 5d? → 5d |  |
| 26 | Tool bar modif grille |  | 3d? → 3d |  |
| 27 | Actions Toolbar |  | 6d? → 6d |  |
| 153 | **Quelques modifications** | 2003-11-17 → 2003-11-14 (-3d) | 2d? → 1d? | 89d → 90d |
| 154 | Automate des menus (Orientation de l'utilisation) | 2003-11-17 → 2003-11-14 (-3d) | 2d? → 1d? | 89d → 90d |
